# TO0008 Rathgeber / Lindsey / Watkins Street REV 9

Schedule from Primavera P6, 2011-09-24 to 2012-09-18, data date 2012-09-15, A marks actual dates.
Must finish by 2012-09-18

## Calendars

- 5-day Workweek: Mon-Fri 08:00-12:00, 13:00-17:00; Sat-Sun off. Exceptions (off unless hours are given): 2011-12-26 to 2011-12-30, 2012-01-02 to 2012-01-06, 2012-04-06, 2012-04-09, 2012-05-01, 2012-05-17, 2012-05-28, 2012-06-07.
- 7-day week: Mon-Fri 08:00-12:00, 13:00-17:00; Sat-Sun 08:00-16:00.

## Schedule

| ID | Activity | Type | Duration | Start | Finish | Predecessors | Complete | Planned start | Planned finish | Constraint | Calendar | Areas |
| --- | --- | --- | --- | --- | --- | --- | --- | --- | --- | --- | --- | --- |
| A1330 | NTP | milestone | 0d | 2011-09-24 A | 2011-09-24 A |  | 100% |  |  |  | 7-day week | Gen |
| A1340 | Construction Period |  | 360d | 2011-09-24 A | 2012-09-17 A | A1330 | 100% |  |  |  | 7-day week | Gen |
| A1000 | Site Mobilization & Traffic constraints |  | 2d | 2012-02-14 A | 2012-02-15 A | A1960 | 100% | 2012-01-09 | 2012-01-10 | start on or after 2012-01-09 |  | P0 |
| A1350 | Tree Cutting |  | 4d | 2012-02-14 A | 2012-02-17 A | A1950, A1000 SS | 100% | 2012-01-09 | 2012-01-12 |  |  | Prep |
| A1950 | Preparatory Inspection Tree Cutting | milestone | 0d | 2012-02-14 A | 2012-02-14 A |  | 100% | 2012-01-09 | 2012-01-09 | as late as possible |  | Prep |
| A1960 | Preparatory Phase 0 | milestone | 0d | 2012-02-14 A | 2012-02-14 A |  | 100% | 2012-01-12 | 2012-01-12 | as late as possible |  | Prep |
| A1360 | Concrete Demolition |  | 1d | 2012-02-15 A | 2012-02-21 A | A1350 FS-1d | 100% | 2012-02-15 | 2012-02-15 |  |  | P0 |
| A1970 | Preparatory Phase 1 | milestone | 0d | 2012-02-16 A | 2012-02-16 A |  | 100% | 2012-03-16 | 2012-03-16 | as late as possible |  | Prep |
| A1365 | Leveling / Compacting |  | 5d | 2012-02-22 A | 2012-02-24 A | A1360 | 100% | 2011-09-26 | 2011-09-30 |  |  | P0 |
| A1370 | Inlets |  | 1d | 2012-02-22 A | 2012-02-23 A | A1360 SS | 100% | 2012-01-12 | 2012-01-12 |  |  | P0 |
| A1380 | Gravel |  | 1d | 2012-02-27 A | 2012-02-27 A | A1370 SS+5d | 100% | 2012-01-19 | 2012-01-19 |  |  | P0 |
| A1420 | Bituminous layer |  | 1d | 2012-02-27 A | 2012-02-27 A | A1380 | 100% | 2012-01-20 | 2012-01-20 |  |  | P0 |
| A1830 | Phase 0 Finished | milestone | 0d | 2012-02-27 A | 2012-02-27 A | A1420 | 100% | 2012-01-23 | 2012-01-23 |  |  | P0 |
| A2000 | Earthwork & Top Soil |  | 16d | 2012-03-01 A | 2012-03-22 A | A1420 SS, A1970 | 100% | 2012-01-20 | 2012-02-10 |  |  | P1 |
| A1900 | Relocating Lights |  | 5d | 2012-03-02 A | 2012-03-06 A |  | 100% | 2011-09-26 | 2011-09-30 |  |  | P1 |
| A2011 | Leveling / Compacting |  | 5d | 2012-03-05 A | 2012-04-24 A | A2010 FF | 100% | 2012-02-13 | 2012-02-17 |  |  | P1 |
| A2012 | Taking Samples |  | 5d | 2012-03-05 A | 2012-03-09 A |  | 100% | 2011-09-26 | 2011-09-30 |  |  | P1 |
| A2013 | Load Plate Tests |  | 5d | 2012-03-05 A | 2012-03-09 A |  | 100% | 2011-09-26 | 2011-09-30 |  |  | P1 |
| A2069 | Demolition Work |  | 5d | 2012-03-05 A | 2012-03-07 A |  | 100% | 2012-04-30 | 2012-05-07 | start on or after 2012-04-09 |  | P3a |
| A2070 | Earthwork |  | 5d | 2012-03-05 A | 2012-03-15 A | A2069 FS-4d | 100% | 2012-05-02 | 2012-05-08 | start on or after 2012-04-09 |  | P3a |
| A2010 | Sewer |  | 16d | 2012-03-12 A | 2012-04-23 A | A2000 SS+5d | 100% | 2012-01-27 | 2012-02-17 |  |  | P1 |
| A2020 | Frost protection layer |  | 5d | 2012-03-12 A | 2012-03-16 A | A2011 SS | 100% | 2012-02-13 | 2012-02-17 |  |  | P1 |
| A2071 | Leveling |  | 3d | 2012-03-16 A | 2012-03-23 A | A2070 | 100% | 2012-05-09 | 2012-05-11 |  |  | P3a |
| A2080 | Sewer work |  | 5d | 2012-03-16 A | 2012-04-20 A | A2070 | 100% | 2012-05-09 | 2012-05-15 |  |  | P3a |
| A2110 | Inlets |  | 7d | 2012-03-16 A | 2012-04-20 A | A2100 | 100% | 2012-05-23 | 2012-06-01 |  |  | P3a |
| A2022 | Gravel bearing layer |  | 5d | 2012-03-19 A | 2012-04-09 A |  | 100% | 2012-03-19 | 2012-03-23 |  |  | P1 |
| A2100 | Curb stones |  | 5d | 2012-03-26 A | 2012-06-01 A | A2091 | 100% | 2012-05-15 | 2012-05-22 |  |  | P3a |
| A2023 | Curb stones |  | 5d | 2012-04-10 A | 2012-04-25 A | A2022 | 100% | 2012-03-26 | 2012-03-30 |  |  | P1 |
| A2130 | Pavement |  | 8d | 2012-04-11 A | 2012-06-01 A | A2112 | 100% | 2012-06-11 | 2012-06-20 |  |  | P3a |
| A2090 | Frost protection |  | 5d | 2012-04-16 A | 2012-06-14 A | A2080, A2070, A2071 | 100% | 2012-05-03 | 2012-05-09 |  |  | P3a |
| A2091 | Gravel bearing layer |  | 5d | 2012-04-18 A | 2012-06-14 A | A2090 | 100% | 2012-05-10 | 2012-05-16 |  |  | P3a |
| A1980 | Preparatory Phase 2 | milestone | 0d | 2012-04-25 A | 2012-04-25 A |  | 100% | 2012-04-17 | 2012-04-17 | as late as possible |  | Prep |
| A1460 | Demolition |  | 9d | 2012-05-02 A | 2012-05-29 A | A1980, A1401 | 100% | 2012-05-07 | 2012-05-18 | start on or after 2012-04-01 |  | P2 |
| A2030 | Bituminous bearing and binding layer |  | 1d | 2012-05-02 A | 2012-05-02 A | A2023 | 100% | 2012-04-30 | 2012-04-30 |  |  | P1 |
| A1401 | SiteSite Mobilization & Traffic constraints |  | 3d | 2012-05-02 A | 2012-05-04 A | A2040 | 100% |  |  | finish on or after 2012-04-16 |  | P2 |
| A1470 | Excavation |  | 7d | 2012-05-04 A | 2012-05-29 A | A1460 SS | 100% | 2012-05-04 | 2012-05-15 | start on or after 2012-04-23 |  | P2 |
| A2039 | Prefinal Phase 1 |  | 1d | 2012-05-07 A | 2012-05-07 A | A2030 | 100% | 2012-05-03 | 2012-05-03 |  |  | P1 |
| A1480 | Leveling and Compacting Subbase |  | 7d | 2012-05-07 A | 2012-05-15 A | A1470 | 100% |  |  |  |  | P2 |
| A2040 | Phase 1 Finished | milestone | 0d | 2012-05-08 A | 2012-05-08 A | A2039 | 100% | 2012-06-18 | 2012-06-18 |  |  | P1 |
| A2111 | Leveling gravel |  | 2d | 2012-05-09 A | 2012-06-14 A | A2110 | 100% | 2012-05-09 | 2012-05-11 |  |  | P3a |
| A1490 | Load Tests |  | 1d | 2012-05-16 A | 2012-05-16 A | A1480 | 100% |  |  |  |  | P2 |
| A2140 | Landscaping |  | 5d | 2012-05-16 A | 2012-07-02 A | A2130 FS-3d, A2141 FF | 100% | 2012-05-16 | 2012-05-24 |  |  | P3a |
| A1509 | Gravel layer |  | 5d | 2012-05-28 A | 2012-06-13 A | A1490 | 100% | 2012-05-23 | 2012-05-30 |  |  | P2 |
| A2360 | Inlets |  | 5d | 2012-05-28 A | 2012-06-04 A |  | 100% | 2012-05-29 | 2012-06-04 |  |  | P2 |
| A2370 | Gravel leveling and compacting |  | 5d | 2012-05-28 A | 2012-06-08 A | A2360 | 100% | 2012-06-18 | 2012-06-22 |  |  | P2 |
| A2112 | Bituminous carrying and binding layer |  | 2d | 2012-06-14 A | 2012-06-18 A | A2111 | 100% | 2012-05-11 | 2012-05-15 |  |  | P3a |
| A1560 | Site Mobilization & Traffic Constraints |  | 2d | 2012-06-18 A | 2012-06-29 A | A1990 | 100% | 2012-06-18 | 2012-06-19 | start on or after 2012-06-01 |  | P3 |
| A2600 | Replacement of manhole |  | 2d | 2012-06-18 A | 2012-06-19 A |  | 100% |  |  |  |  | P2x |
| A1510 | Installation of Curbstones |  | 5d | 2012-06-19 A | 2012-07-17 A | A2360, A1509, A2391, A2370 | 100% | 2012-06-25 | 2012-06-29 |  |  | P2 |
| A1990 | Preparatory Phase 3 | milestone | 0d | 2012-06-19 A | 2012-06-19 A |  | 100% | 2012-06-18 | 2012-06-18 | as late as possible |  | Prep |
| A2560 | Changing inlets |  | 2d | 2012-06-25 A | 2012-06-27 A | A1510 | 100% |  |  |  |  | P2x |
| A2142 | Phase 3a Pre-Final |  | 1d | 2012-06-26 A | 2012-06-26 A | A2140 | 100% | 2012-08-01 | 2012-08-01 |  |  | P3a |
| A2143 | Removing deficiencies |  | 5d | 2012-06-27 A | 2012-07-06 A | A2142 | 100% | 2012-07-18 | 2012-07-24 |  |  | P3a |
| A2570 | Raising street |  | 3d | 2012-06-27 A | 2012-07-13 A | A2560 | 100% | 2012-06-27 | 2012-07-02 |  |  | P2x |
| A2391 | Relocation of light poles |  | 1d | 2012-06-28 A | 2012-06-28 A |  | 100% | 2012-06-18 | 2012-06-18 |  |  | P2 |
| A1001 | Temporary Road |  | 3d | 2012-07-02 A | 2012-07-09 A | A1560 | 100% | 2012-06-20 | 2012-06-22 | start on or after 2012-06-01 |  | P3x |
| A2141 | Relocation of Light Poles |  | 1d | 2012-07-02 A | 2012-07-03 A |  | 100% | 2012-07-31 | 2012-07-31 |  |  | P3a |
| A2430 | Signage |  | 5d | 2012-07-06 A | 2012-09-04 A | A2410 | 100% | 2012-08-29 | 2012-09-04 |  |  | All |
| A2146 | Phase 3a Final and Turnover | milestone | 0d | 2012-07-09 A | 2012-07-09 A | A2143 | 100% | 2012-08-02 | 2012-08-02 |  |  | P3a |
| A2530 | Hydraulic bound bearing layer |  | 5d | 2012-07-16 A | 2012-07-16 A | A2570, A2600 | 100% | 2012-07-02 | 2012-07-09 |  |  | P2x |
| A2540 | Demolition and storage of tar material |  | 7d | 2012-07-16 A | 2012-07-18 A | A1001 | 100% | 2012-06-25 | 2012-07-03 |  |  | P3x |
| A1580 | Excavation |  | 5d | 2012-07-17 A | 2012-07-20 A | A2540 | 100% | 2012-07-04 | 2012-07-10 |  |  | P3 |
| A2385 | Bituminous Bearing & Binding Layer |  | 2d | 2012-07-17 A | 2012-07-17 A | A2530 | 100% | 2012-07-09 | 2012-07-11 |  |  | P2 |
| A2390 | Landscaping |  | 5d | 2012-07-18 A | 2012-08-15 A | A2385 | 100% | 2012-07-18 | 2012-07-24 |  |  | P2 |
| A2590 | Procurement Electrical Distribution Box |  | 30d | 2012-07-18 A | 2012-08-22 A |  | 100% | 2012-07-18 | 2012-08-28 |  |  | P3ax |
| A1590 | Leveling and compacting |  | 5d | 2012-07-20 A | 2012-07-27 A | A1580 | 100% |  |  |  |  | P3 |
| A2441 | Relocation of light poles |  | 1d | 2012-07-23 A | 2012-08-31 A | A1580 | 100% | 2012-07-20 | 2012-07-23 |  |  | P3 |
| A1620 | Gravel layer |  | 5d | 2012-07-25 A | 2012-08-01 A | A1590 FS-2d | 100% |  |  |  |  | P3 |
| A1630 | Curb Stones |  | 5d | 2012-08-01 A | 2012-08-08 A | A1620, A2441 | 100% |  |  |  |  | P3 |
| A2440 | Landscaping |  | 5d | 2012-08-13 A | 2012-08-27 A | A2415 | 100% | 2012-07-27 | 2012-08-02 |  |  | P3 |

| ID | Activity | Type | Duration | Start | Finish | Predecessors | Complete | Planned start | Planned finish | Areas |
| --- | --- | --- | --- | --- | --- | --- | --- | --- | --- | --- |
| A1640 | Bituminous bearing and binding layer |  | 2d | 2012-08-14 A | 2012-08-15 A |  | 100% | 2012-07-18 | 2012-07-19 | P3 |
| A2410 | Asphalt Top Layer |  | 3d | 2012-08-15 A | 2012-08-17 A | A2385, A2112, A1640 | 100% | 2012-07-20 | 2012-07-24 | All |
| A2415 | Walkway at Rathgeber |  | 5d | 2012-08-15 A | 2012-08-21 A | A1640 | 100% |  |  | P3 |
| A2499 | Phase 2 Pre-Final |  | 1d | 2012-08-16 A | 2012-08-16 A | A2390 | 100% | 2012-07-24 | 2012-07-25 | P2 |
| A2500 | Phase 2 finished | milestone | 0d | 2012-08-16 A | 2012-08-16 A | A2499 | 100% | 2012-08-15 | 2012-08-15 | P2 |
| A2509 | Phase 3 Pre-Final |  | 1d | 2012-08-16 A | 2012-08-16 A | A2440 | 100% | 2012-08-03 | 2012-08-03 | P3 |
| A2420 | Street Marking |  | 5d | 2012-08-20 A | 2012-09-07 A | A2410 | 100% | 2012-08-20 | 2012-08-24 | All |
| A2510 | Phase 3 finished | milestone | 0d | 2012-08-31 A | 2012-08-31 A | A2509 | 100% | 2012-08-28 | 2012-08-28 | P3 |
| A2460 | Pre-Final |  | 1d | 2012-09-06 A | 2012-09-06 A | A2420, A2430, A2580 | 100% | 2012-08-27 | 2012-08-27 | All |
| A2470 | Removing Deficiencies |  | 5d | 2012-09-06 A | 2012-09-14 A | A2460 | 100% | 2012-08-28 | 2012-09-03 | All |
| A2580 | Electrical Distribution Box |  | 2d | 2012-09-06 A | 2012-09-07 A | A2590 | 100% | 2012-08-23 | 2012-08-24 | P3ax |
| A2480 | Final |  | 1d | 2012-09-13 A | 2012-09-13 A | A2470 | 100% | 2012-09-04 | 2012-09-04 | All |
| A2610 | Phase 3a finished | milestone | 0d | 2012-09-14 A | 2012-09-14 A |  | 100% | 2012-08-15 | 2012-08-15 | P3a |
| A2490 | Contractual End Date | milestone | 0d | 2012-09-18 A | 2012-09-18 A | A1340 | 100% |  |  | Gen |

## Activity codes

| Code | Value | Meaning |
| --- | --- | --- |
| Areas | All | All Phases |
| Areas | Gen | General |
| Areas | P0 | Phase 0 |
| Areas | P1 | Phase 1 (New Ring Road) |
| Areas | P2 | Phase 2 (Lindsey Road) |
| Areas | P2x | Phase 2 (Work included in mods) |
| Areas | P3 | Phase 3 (Walkins Place) |
| Areas | P3a | Phase 3a (Parking Lot) |
| Areas | P3ax | Phase 3a (Work included in mods) |
| Areas | P3x | Phase 3 (Work included in mods) |
| Areas | Prep | Preparation |
