# ICDS Buildings Baumholder 10 Buildings TO0090, 16 Buildings TO0047, TO0048 REV2

Schedule from Primavera P6, 2012-08-23 to 2013-08-16, data date 2013-02-08, A marks actual dates.

## Calendars

- 5 Day Workweek: Mon-Fri 08:00-12:00, 13:00-17:00; Sat-Sun off. Exceptions (off unless hours are given): 2012-10-03, 2012-12-24 to 2012-12-28, 2012-12-31 to 2013-01-01.
- 7 Day Workweek: Mon-Fri 08:00-12:00, 13:00-17:00; Sat-Sun 08:00-16:00.

## Schedule

| ID | Activity | Type | Duration | Start | Finish | Predecessors | Complete | Remaining | Planned start | Planned finish | Total float | Free float | Constraint | Calendar | Phase | Contract | Subcontractor |
| --- | --- | --- | --- | --- | --- | --- | --- | --- | --- | --- | --- | --- | --- | --- | --- | --- | --- |
| A1290 | NTP | milestone | 0d | 2012-08-23 A | 2012-08-23 A |  | 100% |  |  |  |  |  |  | 7 Day Workweek | GENERAL | TO47 |  |
| A1310 | Performance Period |  | 180d | 2012-08-23 A | 2013-02-18 | A1290 | 94% | 11d |  |  | 0d | 172d |  | 7 Day Workweek | GENERAL | TO47 |  |
| A1000 | NTP | milestone | 0d | 2012-09-26 A | 2012-09-26 A |  | 100% |  |  |  |  |  | start on 2012-09-26 | 7 Day Workweek | GENERAL | TO90 |  |
| A1010 | Performance Period |  | 150d | 2012-09-26 A | 2013-02-22 | A1000 | 90% | 15d |  |  | 0d | 174d |  | 7 Day Workweek | GENERAL | TO90 |  |
| A1030 | Administrative Work / Submittals |  | 50d | 2012-09-26 A | 2012-11-14 A | A1000 | 100% |  |  |  |  |  |  | 7 Day Workweek | PREP |  |  |
| A1450 | Preparation / Clarification 8341 |  | 4d | 2012-11-05 A | 2012-11-08 A |  | 100% |  |  |  |  |  | start on or after 2012-11-05 |  | CON | TO48 | GRIMM |
| A1470 | Preparation / Clarification 8342 |  | 4d | 2012-11-05 A | 2012-11-08 A |  | 100% |  |  |  |  |  | start on or after 2012-11-05 |  | CON | TO47 | GRIMM |
| A1460 | Construction 8341 |  | 15d | 2012-11-09 A | 2013-02-08 A | A1450 | 100% |  | 2012-11-09 | 2012-11-29 |  |  |  |  | CON | TO48 | GRIMM |
| A1480 | Construction 8342 |  | 15d | 2012-11-09 A | 2013-02-08 A | A1470 | 100% |  | 2012-11-09 | 2012-11-29 |  |  |  |  | CON | TO47 | GRIMM |
| A1050 | Preparation / Clarification 8422 |  | 4d | 2012-11-15 A | 2012-11-20 A | A1030 | 100% |  |  |  |  |  |  |  | CON | TO90 | FMS |
| A1110 | Preparation / Clarification 8424 |  | 4d | 2012-11-15 A | 2012-11-20 A | A1030 | 100% |  |  |  |  |  |  |  | CON | TO90 | FMS |
| A1100 | Construction 8422 |  | 15d | 2012-11-21 A | 2012-12-21 A | A1050 | 100% |  | 2012-11-21 | 2012-12-11 |  |  |  |  | CON | TO90 | FMS |
| A1120 | Construction 8424 |  | 15d | 2012-11-21 A | 2012-12-21 A | A1110 | 100% |  | 2012-11-21 | 2012-12-11 |  |  |  |  | CON | TO90 | FMS |
| A1350 | Preparation / Clarification 8548 |  | 4d | 2013-01-07 A | 2013-01-11 A |  | 100% |  | 2013-01-28 | 2013-01-31 |  |  |  |  | CON | TO90 | SEB |
| A1170 | Preparation / Clarification 8404 |  | 4d | 2013-01-14 A | 2013-01-18 A |  | 100% |  | 2013-04-01 | 2013-04-04 |  |  |  |  | CON | TO90 | SEB |
| A1210 | Preparation / Clarification 8405 |  | 4d | 2013-01-14 A | 2013-01-18 A |  | 100% |  | 2013-04-01 | 2013-04-04 |  |  |  |  | CON | TO90 | SEB |
| A1360 | Construction 8548 |  | 15d | 2013-01-14 A | 2013-02-12 | A1350 | 80% | 3d | 2013-02-01 | 2013-02-21 | 8d | 132d |  |  | CON | TO90 | SEB |
| A1180 | Construction 8404 |  | 15d | 2013-01-21 A | 2013-02-11 | A1170 | 90% | 1.5d | 2013-04-05 | 2013-04-25 | -32.5d | 76.5d |  |  | CON | TO90 | SEB |
| A1220 | Construction 8405 |  | 15d | 2013-01-21 A | 2013-02-11 | A1210 | 90% | 1.5d | 2013-04-05 | 2013-04-25 | -32.5d | 76.5d |  |  | CON | TO90 | SEB |
| A1430 | Preparation / Clarification 8439 |  | 4d | 2013-01-21 A | 2013-01-25 A |  | 100% |  | 2013-01-28 | 2013-01-31 |  |  |  |  | CON | TO90 | GRIMM |
| A1440 | Construction 8439 |  | 52d | 2013-01-21 A | 2013-04-18 | A1430 | 5% | 49.4d | 2013-03-05 | 2013-05-15 | 85.6d |  |  |  | CON | TO90 | GRIMM |
| A1049 | SUSPENTION |  | 120d | 2013-01-29 A | 2013-05-28 |  | 8% | 110d |  |  | -183d | 0d | start on or after 2013-01-29 | 7 Day Workweek | PREP |  |  |
| A1190 | Preparation / Clarification 8264 |  | 4d | 2013-02-08 | 2013-02-13 | A1100 FS-5d, A1120 FS-5d |  |  |  |  | -39d | 0d |  |  | CON | TO47 | FMS |
| A1200 | Construction 8264 |  | 23d | 2013-02-14 | 2013-03-18 | A1190 |  |  |  |  | -39d | 51d |  |  | CON | TO47 | FMS |
| A1130 | Preparation / Clarification 8303 |  | 4d | 2013-05-29 | 2013-06-03 | A1220, A1030, A1049 |  |  |  |  | -109d | 0d |  |  | CON | TO47 | SEB |
| A1230 | Preparation / Clarification 8306 |  | 4d | 2013-05-29 | 2013-06-03 | A1049, A1200 |  |  |  |  | -90d | 0d |  |  | CON | TO47 | FMS |
| A1270 | Preparation / Clarification 8338 |  | 4d | 2013-05-29 | 2013-06-03 | A1049 |  |  |  |  | -124d | 0d | start on or after 2013-01-02 |  | CON | TO48 | GRIMM |
| A1330 | Preparation / Clarification 8547 |  | 4d | 2013-05-29 | 2013-06-03 | A1049 |  |  |  |  | -124d | 0d |  |  | CON | TO90 | FMS |
| A1370 | Preparation / Clarification 8301 |  | 4d | 2013-05-29 | 2013-06-03 | A1049, A1180 |  |  |  |  | -109d | 0d |  |  | CON | TO90 | SEB |
| A1140 | Construction 8303 |  | 15d | 2013-06-04 | 2013-06-24 | A1130 |  |  |  |  | -109d | 0d |  |  | CON | TO47 | SEB |
| A1240 | Construction 8306 |  | 15d | 2013-06-04 | 2013-06-24 | A1230 |  |  |  |  | -90d | 34d |  |  | CON | TO47 | FMS |
| A1280 | Construction 8338 |  | 30d | 2013-06-04 | 2013-07-15 | A1270 |  |  |  |  | -124d | 0d |  |  | CON | TO48 | GRIMM |
| A1340 | Construction 8547 |  | 15d | 2013-06-04 | 2013-06-24 | A1330 |  |  |  |  | -124d | 0d |  |  | CON | TO90 | FMS |
| A1380 | Construction 8301 |  | 15d | 2013-06-04 | 2013-06-24 | A1370 |  |  |  |  | -109d | 0d |  |  | CON | TO90 | SEB |
| A1150 | Preparation / Clarification 8304 |  | 4d | 2013-06-25 | 2013-06-28 | A1380, A1030, A1049 |  |  |  |  | -109d | 0d |  |  | CON | TO47 | SEB |
| A1250 | Preparation / Clarification 8313 |  | 4d | 2013-06-25 | 2013-06-28 | A1140, A1049 |  |  |  |  | -109d | 0d |  |  | CON | TO48 | SEB |
| A1390 | Preparation / Clarification 8315 |  | 4d | 2013-06-25 | 2013-06-28 | A1049, A1340 |  |  |  |  | -124d | 0d |  |  | CON | TO90 | FMS |
| A1160 | Construction 8304 |  | 15d | 2013-07-01 | 2013-07-19 | A1150 |  |  |  |  | -109d | 15d |  |  | CON | TO47 | SEB |
| A1260 | Construction 8313 |  | 15d | 2013-07-01 | 2013-07-19 | A1250 |  |  |  |  | -109d | 15d |  |  | CON | TO48 | SEB |
| A1400 | Construction 8315 |  | 15d | 2013-07-01 | 2013-07-19 | A1390 |  |  |  |  | -124d | 0d |  |  | CON | TO90 | FMS |
| A1262 | Preparation / Clarification 8318 |  | 4d | 2013-07-16 | 2013-07-19 | A1280, A1049 |  |  |  |  | -124d | 0d |  |  | CON | TO48 | GRIMM |
| A1263 | Construction 8318 |  | 15d | 2013-07-22 | 2013-08-09 | A1262 |  |  |  |  | -124d | 0d |  |  | CON | TO48 | GRIMM |
| A1410 | Preparation / Clarification 8316 |  | 4d | 2013-07-22 | 2013-07-25 | A1049, A1400 |  |  |  |  | -124d | 0d |  |  | CON | TO90 | FMS |
| A1420 | Construction 8316 |  | 15d | 2013-07-26 | 2013-08-15 | A1410 |  |  |  |  | -124d | 0d |  |  | CON | TO90 | FMS |
| A1320 | Project End | milestone | 0d | 2013-08-10 | 2013-08-10 | A1160, A1263, A1260, A1240, A1280, A1310, A1380 |  |  |  |  | -172d | 6d | start on 2013-02-19 | 7 Day Workweek | GENERAL | TO47 |  |
| A1020 | Project End | milestone | 0d | 2013-08-16 | 2013-08-16 | A1010, A1360, A1420 |  |  |  |  | -174d | 0d | start on 2013-02-23 | 7 Day Workweek | GENERAL | TO90 |  |

## Activity codes

| Code | Value | Meaning |
| --- | --- | --- |
| Contract | TO47 | Task Order 0047: 8 Buildings |
| Contract | TO48 | Task Order 0048: 8 Buildings |
| Contract | TO90 | Task Order 0090: 10 Buildings |
| Phase | CON | Construction |
| Phase | GENERAL | General Activities |
| Phase | PREP | Preparation Work |
| Subcontractor | GRIMM | Grimm |
