# Initial Project Schedule Renovate Buildings 8108 and 8228 Smith Barracks

Schedule from Primavera P6, 2018-09-28 to 2021-01-18, data date 2018-09-28, costs in EUR, A marks actual dates.

## Calendars

- Workweek+Rhld-Pf+US: Mon-Fri 08:00-12:00, 13:00-17:00; Sat-Sun off. Exceptions (off unless hours are given): 2018-10-03, 2018-10-08, 2018-11-01, 2018-11-12, 2018-11-22, 2018-12-25 to 2018-12-26, 2019-01-01, 2019-01-21, 2019-02-18, 2019-04-19, 2019-04-22, 2019-05-01, 2019-05-27, 2019-05-30, 2019-06-10, 2019-06-20, 2019-07-04, 2019-09-02, 2019-10-03, 2019-10-14, 2019-11-01, 2019-11-11, 2019-11-28, 2019-12-25 to 2019-12-26, 2020-01-01, 2020-01-20, 2020-02-17, 2020-04-10, 2020-04-13, 2020-05-01, 2020-05-21, 2020-05-25, 2020-06-01, 2020-06-11, 2020-07-03, 2020-09-07, 2020-10-12, 2020-11-11, 2020-11-26, 2020-12-25.
- Calendar Dates: Mon-Sun 00:00-00:00.

## Resources

| Resource | Group | Rate |
| --- | --- | --- |
| Lump Sum Price | equipment | 1 |

## Schedule

| ID | WBS | Activity | Type | Duration | Start | Finish | Predecessors | Complete | Planned start | Planned finish | Total float | Free float | Constraint | Calendar | BIDI | RESP | PHAS |
| --- | --- | --- | --- | --- | --- | --- | --- | --- | --- | --- | --- | --- | --- | --- | --- | --- | --- |
|  | 779 | **Overall Schedule** |  |  | 2018-09-28 | 2021-01-18 |  |  |  |  |  |  |  |  |  |  |  |
|  | 417 | **Contractual Dates** |  |  | 2018-09-28 | 2021-01-18 |  |  |  |  |  |  |  |  |  |  |  |
| CD1000 |  | Award | milestone | 0d | 2018-09-28 | 2018-09-28 |  |  |  |  | 24d |  | start on or after 2018-09-28 | Calendar Dates | CLIN 0001 | GOVT | CD |
| CD1010 |  | NTP | milestone | 0d | 2018-10-22 | 2018-10-22 | CD1000 |  |  |  | 0d |  | mandatory start 2018-10-22 | Calendar Dates | CLIN 0001 | GOVT | CD |
| CD1020 |  | Contract Performance Period |  | 720d | 2018-10-22 | 2020-10-11 | CD1010 |  |  |  | 0d | 8.38d |  | Calendar Dates | CLIN 0001 | GOVT | CD |
| CD1030 |  | Pre-Construction Meeting (proposed) | milestone | 0d | 2018-11-13 | 2018-11-13 |  |  |  |  | 288d | 296d | start on or after 2018-11-13 | Calendar Dates | CLIN 0001 | GOVT | CD |
| CD1050 |  | End of Design | milestone | 0d | 2019-09-04 | 2019-09-04 | DE1590, DE1290 |  |  |  | 334d |  |  |  | CLIN 0001 | MICK | CD |
| CD1040 |  | Required Completion | milestone | 0d | 2020-10-19 | 2020-10-19 | CO2190, CO4180, CD1020 |  |  |  | -8.38d | 90.62d | finish on or before 2020-10-11 | Calendar Dates | CLIN 0001 | MICK | CD |
| CD1060 |  | End of Construction | milestone | 0d | 2020-10-19 | 2020-10-19 | CO2190, CO4180 |  |  |  | 61d |  |  |  | CLIN 0001 | MICK | CD |
| CD1070 |  | End of Project | milestone | 0d | 2021-01-18 | 2021-01-18 | CO2420, CO4410 |  |  |  | 0d |  |  | Calendar Dates | CLIN 0001 | MICK | CD |
|  | 1 | **Pre-Design Submittals** |  |  | 2018-09-28 | 2019-03-25 |  |  |  |  |  |  |  |  |  |  |  |
| PD1090 |  | Design QC Plan preparation |  | 5d | 2018-09-28 A | 2019-02-21 A |  | 100% | 2018-09-28 | 2018-10-05 |  |  |  |  |  |  |  |
| PD1050 |  | Initial Project Schedule Resubmittal | milestone | 0d | 2018-09-28 | 2018-09-28 |  |  |  |  | 521d | 0d |  |  |  |  |  |
| PD1060 |  | Initial Project Schedule GOV review |  | 30d | 2018-09-28 | 2018-11-14 | PD1050 |  |  |  | 521d |  |  |  |  |  |  |
| PD1080 |  | Submittal Register | milestone | 0d | 2018-10-22 | 2018-10-22 | CD1010 |  |  |  | 144.38d | 154d |  | Calendar Dates | CLIN 0001 | MICK | DS |
| PD1070 |  | Initial Project Schedule approval | milestone | 0d | 2018-12-03 | 2018-12-03 | PD1040 |  |  |  | 171d | 176d |  |  | CLIN 0001 | GOVT | DS |
| PD1000 |  | Preliminary Schedule Submittal | milestone | 0d | 2019-02-08 A | 2019-02-08 A | CD1010 FS+15d | 100% |  |  |  |  |  | Calendar Dates | CLIN 0001 | MICK | DS |
| PD1010 |  | Prelimitary Schedule GOV review |  | 14d | 2019-02-08 A | 2019-02-22 A | PD1000 | 100% |  |  |  |  |  | Calendar Dates | CLIN 0001 | GOVT | DS |
| PD1030 |  | Initial Project Schedule Submittal | milestone | 0d | 2019-02-14 A | 2019-02-14 A | CD1010 FS+42d | 100% |  |  |  |  |  | Calendar Dates | CLIN 0001 | MICK | DS |
| PD1040 |  | Initial Project Schedule GOV review |  | 8d | 2019-02-14 A | 2019-02-22 A | PD1030 | 100% |  |  |  |  |  | Calendar Dates | CLIN 0001 | GOVT | DS |
| PD1020 |  | Preliminary Schedule approval | milestone | 0d | 2019-02-22 A | 2019-02-22 A | PD1010 | 100% |  |  |  |  |  |  | CLIN 0001 | GOVT | DS |
| PD1100 |  | Design QC Plan Submittal | milestone | 0d | 2019-02-22 A | 2019-02-22 A | CD1010 | 100% |  |  |  |  |  |  | CLIN 0001 | MICK | DS |
| PD1110 |  | Design QC Plan GOV review |  | 30d | 2019-02-22 | 2019-03-24 | PD1100 |  |  |  | -8.62d | 1d | start on or after 2019-02-22 | Calendar Dates | CLIN 0001 | GOVT | DS |
| PD1120 |  | Design QC Plan approval | milestone | 0d | 2019-03-25 | 2019-03-25 | PD1110 |  |  |  | -5d | 0d |  |  | CLIN 0001 | GOVT | DS |

| ID | WBS | Activity | Type | Duration | Start | Finish | Predecessors | Complete | Total float | Free float | Calendar | Resources | Cost | BIDI | RESP | PHAS | Zusatztext |
| --- | --- | --- | --- | --- | --- | --- | --- | --- | --- | --- | --- | --- | --- | --- | --- | --- | --- |
|  | 435 | **Design Schedule** |  |  | 2018-11-21 | 2019-09-04 |  |  |  |  |  |  |  |  |  |  |  |
|  | 1396 | **Design Bldg. 8108** |  |  | 2018-11-21 | 2019-09-04 |  |  |  |  |  |  |  |  |  |  |  |
| DE1010 |  | Inventory on site |  | 18d | 2018-11-21 A | 2018-12-17 A | DE1000 | 100% |  |  |  |  |  | CLIN 0001 | MICK | DS |  |
| DE1000 |  | Start Design 8108 | milestone | 0d | 2019-03-25 | 2019-03-25 | CD1010, PD1120 |  | -9.62d | 0d | Calendar Dates |  |  | CLIN 0001 | MICK | DS |  |
| DE1020 |  | Pre-Design-Meeting | milestone | 0d | 2019-03-25 | 2019-03-25 | DE1010, PD1080 |  | -5d | 0d |  |  |  | CLIN 0001 | GOVT | DS |  |
| DE1030 |  | 35%-Design |  | 10d | 2019-03-25 | 2019-04-04 | DE1020, A1066 (other project) |  | -9d | 0d | Calendar Dates | Lump Sum Price [219050 h] | 219,050.18 | CLIN 0001 | MICK | DS | 0001 |
| DE1040 |  | Submittal to Mickan | milestone | 0d | 2019-04-04 | 2019-04-04 | DE1030 |  | -9d | 0d | Calendar Dates |  |  | CLIN 0001 | MICK | DS |  |
| DE1050 |  | Review Mickan |  | 7d | 2019-04-04 | 2019-04-12 | DE1040 |  | -7d | 0d |  |  |  | CLIN 0001 | MICK | DS |  |
| DE1060 |  | 35% Design-Submittal | milestone | 0d | 2019-04-12 | 2019-04-12 | DE1050 |  | -7d | 0d |  |  |  | CLIN 0001 | MICK | DS |  |
| DE1070 |  | Dicipline Specific Checklists Submittal | milestone | 0d | 2019-04-12 | 2019-04-12 | DE1060 |  | -7d | 0d |  |  |  | CLIN 0001 | MICK | DS |  |
| DE1080 |  | 35% Design GOV-Review |  | 30d | 2019-04-12 | 2019-05-12 | DE1060, DE1070 |  | -9d | 0.62d | Calendar Dates |  |  | CLIN 0001 | GOVT | DS |  |
| DE1090 |  | 35% Design-Meeting | milestone | 0d | 2019-05-13 | 2019-05-13 | DE1080 |  | -5d | 0d |  |  |  | CLIN 0001 | GOVT | DS |  |
| DE1100 |  | 35% Design Approval | milestone | 0d | 2019-05-13 | 2019-05-13 | DE1090 |  | -5d | 0d |  |  |  | CLIN 0001 | GOVT | DS |  |
| DE1110 |  | Preparation "Kenntnisgabeverfahren" |  | 15d | 2019-05-13 | 2019-06-04 | DE1100 |  | 15d | 0d |  |  |  | CLIN 0001 | MICK | DS |  |
| DE1150 |  | 95%-Design |  | 30d | 2019-05-13 | 2019-06-12 | DE1100 |  | -8.62d | 0d | Calendar Dates | Lump Sum Price [375515 h] | 375,514.6 | CLIN 0001 | MICK | DS | 0001 |
| DE1120 |  | Submitting "Kenntnisgabeverfahren" | milestone | 0d | 2019-06-05 | 2019-06-05 | DE1110 |  | 15d | 0d |  |  |  | CLIN 0001 | MICK | DS |  |
| DE1130 |  | HN Review "Kenntnisgabeverfahren" |  | 42d | 2019-06-05 | 2019-08-06 | DE1120 |  | 15d | 0d |  |  |  | CLIN 0001 | HN | DS |  |
| DE1160 |  | Submittal to Mickan | milestone | 0d | 2019-06-12 | 2019-06-12 | DE1150 |  | -5d | 0d |  |  |  | CLIN 0001 | MICK | DS |  |
| DE1170 |  | Review Mickan |  | 4d | 2019-06-12 | 2019-06-17 | DE1160 |  | -5d | 0d |  |  |  | CLIN 0001 | MICK | DS |  |
| DE1180 |  | 95% Design-Submittal | milestone | 0d | 2019-06-17 | 2019-06-17 | DE1170 |  | -5d | 0d |  |  |  | CLIN 0001 | MICK | DS |  |
| DE1190 |  | Dicipline Specific Checklists Submittal | milestone | 0d | 2019-06-17 | 2019-06-17 | DE1180 |  | -5d | 0d |  |  |  | CLIN 0001 | MICK | DS |  |
| DE1200 |  | 95% Design GOV-Review |  | 30d | 2019-06-17 | 2019-07-17 | DE1180, DE1190 |  | -8d | 0d | Calendar Dates |  |  | CLIN 0001 | GOVT | DS |  |
| DE1210 |  | 95% Design-Meeting | milestone | 0d | 2019-07-17 | 2019-07-17 | DE1200 |  | -6d | 0d |  |  |  | CLIN 0001 | GOVT | DS |  |
| DE1220 |  | 95% Design Approval | milestone | 0d | 2019-07-17 | 2019-07-17 | DE1210 |  | -6d | 0d |  |  |  | CLIN 0001 | GOVT | DS |  |
| DE1230 |  | 100%-Design |  | 8d | 2019-07-18 | 2019-07-29 | DE1220 |  | -6d | 0d |  | Lump Sum Price [31292.9 h] | 31,292.88 | CLIN 0001 | MICK | DS | 0001 |
| DE1240 |  | Submittal to Mickan | milestone | 0d | 2019-07-29 | 2019-07-29 | DE1230 |  | -6d | 0d |  |  |  | CLIN 0001 | MICK | DS |  |
| DE1250 |  | Review Mickan |  | 5d | 2019-07-30 | 2019-08-05 | DE1240 |  | -6d | 0d |  |  |  | CLIN 0001 | MICK | DS |  |
| DE1260 |  | 100% Design-Submittal | milestone | 0d | 2019-08-05 | 2019-08-05 | DE1250 |  | -6d | 0d |  |  |  | CLIN 0001 | MICK | DS |  |
| DE1270 |  | 100% Design GOV-Review |  | 30d | 2019-08-05 | 2019-09-04 | DE1260 |  | -8d | 0d | Calendar Dates |  |  | CLIN 0001 | GOVT | DS |  |
| DE1140 |  | HN Approval "Kenntnisgabeverfahren" | milestone | 0d | 2019-08-06 | 2019-08-06 | DE1130 |  | 15d | 20d |  |  |  | CLIN 0001 | HN | DS |  |
| DE1280 |  | 100% Design Approval | milestone | 0d | 2019-09-04 | 2019-09-04 | DE1270 |  | -5d | 0d |  |  |  | CLIN 0001 | GOVT | DS |  |
| DE1290 |  | End Design 8108 | milestone | 0d | 2019-09-04 | 2019-09-04 | DE1280, DE1140 |  | -5d | 0d |  |  |  | CLIN 0001 | MICK | DS |  |

Notes:
- DE1030: Expenses: Vorgabe-Einnahmen 0
- DE1150: Expenses: Vorgabe-Einnahmen 0
- DE1230: Expenses: Vorgabe-Einnahmen 0

| ID | WBS | Activity | Type | Duration | Start | Finish | Predecessors | Complete | Total float | Free float | Calendar | Resources | Cost | BIDI | RESP | PHAS | Zusatztext |
| --- | --- | --- | --- | --- | --- | --- | --- | --- | --- | --- | --- | --- | --- | --- | --- | --- | --- |
|  | 1407 | **Design Bldg. 8228** |  |  | 2018-11-21 | 2019-09-04 |  |  |  |  |  |  |  |  |  |  |  |
| DE1310 |  | Inventory on site |  | 18d | 2018-11-21 A | 2018-12-17 A | DE1300 | 100% |  |  |  |  |  | CLIN 0004 | MICK | DS |  |
| DE1300 |  | Start Design 8228 | milestone | 0d | 2019-03-25 | 2019-03-25 | CD1010, PD1120 |  | 1d | 0d | Calendar Dates |  |  | CLIN 0004 | MICK | DS |  |
| DE1320 |  | Pre-Design-Meeting | milestone | 0d | 2019-03-25 | 2019-03-25 | DE1310 |  | 1d | 0d |  |  |  | CLIN 0004 | GOVT | DS |  |
| DE1330 |  | 35%-Design |  | 10d | 2019-03-25 | 2019-04-04 | DE1320 |  | 1d | 0d | Calendar Dates | Lump Sum Price [266451 h] | 266,450.85 | CLIN 0004 | MICK | DS | 0001 |
| DE1340 |  | Submittal to Mickan | milestone | 0d | 2019-04-04 | 2019-04-04 | DE1330 |  | 1d | 0d | Calendar Dates |  |  | CLIN 0004 | MICK | DS |  |
| DE1350 |  | Review Mickan |  | 7d | 2019-04-04 | 2019-04-12 | DE1340 |  | 1d | 0d |  |  |  | CLIN 0004 | MICK | DS |  |
| DE1360 |  | 35% Design-Submittal | milestone | 0d | 2019-04-12 | 2019-04-12 | DE1350 |  | 1d | 0d |  |  |  | CLIN 0004 | MICK | DS |  |
| DE1370 |  | Dicipline Specific Checklists Submittal | milestone | 0d | 2019-04-12 | 2019-04-12 | DE1360 |  | 1d | 0d |  |  |  | CLIN 0004 | MICK | DS |  |
| DE1380 |  | 35% Design GOV-Review |  | 30d | 2019-04-12 | 2019-05-12 | DE1360, DE1370 |  | 3d | 0.62d | Calendar Dates |  |  | CLIN 0004 | GOVT | DS |  |
| DE1390 |  | 35% Design-Meeting | milestone | 0d | 2019-05-13 | 2019-05-13 | DE1380 |  | 3d | 0d |  |  |  | CLIN 0004 | GOVT | DS |  |
| DE1400 |  | 35% Design Approval | milestone | 0d | 2019-05-13 | 2019-05-13 | DE1390 |  | 3d | 0d |  |  |  | CLIN 0004 | GOVT | DS |  |
| DE1410 |  | Preparation "Kenntnisgabeverfahren" |  | 15d | 2019-05-13 | 2019-06-04 | DE1400 |  | 23d | 0d |  |  |  | CLIN 0004 | MICK | DS |  |
| DE1450 |  | 95%-Design |  | 30d | 2019-05-13 | 2019-06-12 | DE1400 |  | 2.38d | 0d | Calendar Dates | Lump Sum Price [456773 h] | 456,772.89 | CLIN 0004 | MICK | DS | 0001 |
| DE1420 |  | Submitting "Kenntnisgabeverfahren" | milestone | 0d | 2019-06-05 | 2019-06-05 | DE1410 |  | 23d | 0d |  |  |  | CLIN 0004 | MICK | DS |  |
| DE1430 |  | HN Review "Kenntnisgabeverfahren" |  | 42d | 2019-06-05 | 2019-08-06 | DE1420 |  | 23d | 0d |  |  |  | CLIN 0004 | HN | DS |  |
| DE1460 |  | Submittal to Mickan | milestone | 0d | 2019-06-12 | 2019-06-12 | DE1450 |  | 3d | 0d |  |  |  | CLIN 0004 | MICK | DS |  |
| DE1470 |  | Review Mickan |  | 4d | 2019-06-12 | 2019-06-17 | DE1460 |  | 3d | 0d |  |  |  | CLIN 0004 | MICK | DS |  |
| DE1480 |  | 95% Design-Submittal | milestone | 0d | 2019-06-17 | 2019-06-17 | DE1470 |  | 3d | 0d |  |  |  | CLIN 0004 | MICK | DS |  |
| DE1490 |  | Dicipline Specific Checklists Submittal | milestone | 0d | 2019-06-17 | 2019-06-17 | DE1480 |  | 3d | 0d |  |  |  | CLIN 0004 | MICK | DS |  |
| DE1500 |  | 95% Design GOV-Review |  | 30d | 2019-06-17 | 2019-07-17 | DE1480, DE1490 |  | 6d | 0d | Calendar Dates |  |  | CLIN 0004 | GOVT | DS |  |
| DE1510 |  | 95% Design-Meeting | milestone | 0d | 2019-07-17 | 2019-07-17 | DE1500 |  | 4d | 0d |  |  |  | CLIN 0004 | GOVT | DS |  |
| DE1520 |  | 95% Design Approval | milestone | 0d | 2019-07-17 | 2019-07-17 | DE1510 |  | 4d | 0d |  |  |  | CLIN 0004 | GOVT | DS |  |
| DE1530 |  | 100%-Design |  | 8d | 2019-07-18 | 2019-07-29 | DE1520 |  | 4d | 0d |  | Lump Sum Price [38064.4 h] | 38,064.41 | CLIN 0004 | MICK | DS | 0001 |
| DE1540 |  | Submittal to Mickan | milestone | 0d | 2019-07-29 | 2019-07-29 | DE1530 |  | 4d | 0d |  |  |  | CLIN 0004 | MICK | DS |  |
| DE1550 |  | Review Mickan |  | 5d | 2019-07-30 | 2019-08-05 | DE1540 |  | 4d | 0d |  |  |  | CLIN 0004 | MICK | DS |  |
| DE1560 |  | 100% Design-Submittal | milestone | 0d | 2019-08-05 | 2019-08-05 | DE1550 |  | 4d | 0d |  |  |  | CLIN 0004 | MICK | DS |  |
| DE1570 |  | 100% Design GOV-Review |  | 30d | 2019-08-05 | 2019-09-04 | DE1560 |  | 5d | 0d | Calendar Dates |  |  | CLIN 0004 | GOVT | DS |  |
| DE1440 |  | HN Approval "Kenntnisgabeverfahren" | milestone | 0d | 2019-08-06 | 2019-08-06 | DE1430 |  | 23d | 20d |  |  |  | CLIN 0004 | HN | DS |  |
| DE1580 |  | 100% Design Approval | milestone | 0d | 2019-09-04 | 2019-09-04 | DE1570 |  | 3d | 0d |  |  |  | CLIN 0004 | GOVT | DS |  |
| DE1590 |  | End Design 8228 | milestone | 0d | 2019-09-04 | 2019-09-04 | DE1580, DE1440 |  | 3d | 0d |  |  |  | CLIN 0004 | MICK | DS |  |

Notes:
- DE1330: Expenses: Vorgabe-Einnahmen 0
- DE1450: Expenses: Vorgabe-Einnahmen 0
- DE1530: Expenses: Vorgabe-Einnahmen 0

| ID | WBS | Activity | Type | Duration | Start | Finish | Predecessors | Total float | Free float | Constraint | Calendar | Resources | Cost | BIDI | RESP | PHAS | FOW |
| --- | --- | --- | --- | --- | --- | --- | --- | --- | --- | --- | --- | --- | --- | --- | --- | --- | --- |
|  | 2 | **Pre-Construction Submittals** |  |  | 2019-02-22 | 2019-09-04 |  |  |  |  |  |  |  |  |  |  |  |
| PC1000 |  | QCQ Plan Submittal | milestone | 0d | 2019-02-22 | 2019-02-22 |  | 102d | 0d | as late as possible |  |  |  | CLIN 0002 | MICK | CO |  |
| PC1010 |  | CQC Plan Review |  | 30d | 2019-02-22 | 2019-03-24 | PC1000 | 156d | 61d | start on or after 2019-02-22 | Calendar Dates |  |  | CLIN 0002 | GOVT | CO |  |
| PC1020 |  | QCQ Plan Approval | milestone | 0d | 2019-05-24 | 2019-05-24 | PC1010 | 62d | 0d | as late as possible |  |  |  | CLIN 0002 | GOVT | CO |  |
| PC1030 |  | Letter of Authority Submittal | milestone | 0d | 2019-05-28 | 2019-05-28 | PC1020 | 62d | 67d | start on or after 2019-05-25 |  |  |  | CLIN 0002 | MICK | CO |  |
| PC1040 |  | Site Safety & Health Plan Submittal | milestone | 0d | 2019-08-05 | 2019-08-05 |  | -6d | 0d | as late as possible |  |  |  | CLIN 0002 | MICK | CO |  |
| PC1050 |  | Site Safety & Health Plan Review |  | 30d | 2019-08-05 | 2019-09-04 | PC1040 | -8d | 0d | as late as possible | Calendar Dates |  |  | CLIN 0002 | GOVT | CO |  |
| PC1060 |  | Site Safety & Health Plan Approval | milestone | 0d | 2019-09-04 | 2019-09-04 | PC1050 | -5d | 0d | as late as possible |  |  |  | CLIN 0002 | GOVT | CO |  |
|  | 133 | **Construction** |  |  | 2019-09-05 | 2021-01-18 |  |  |  |  |  |  |  |  |  |  |  |
|  | 611 | **Bldg. 8108** |  |  | 2019-09-05 | 2021-01-18 |  |  |  |  |  |  |  |  |  |  |  |
| CO1000 |  | Start of Construction 8108 | milestone | 0d | 2019-09-05 | 2019-09-05 | CD1030, DE1290, PD1070, PD1020, PC1060, PC1030 | -5d | 0d |  |  |  |  | CLIN 0002 | MICK | CO |  |
| CO1010 |  | Site mobilization |  | 5d | 2019-09-05 | 2019-09-11 | CO1000 | -5d | 0d |  |  |  |  | CLIN 0002 | MICK | CO |  |
| CO1020 |  | Site mobilization Haz. Demolition work |  | 5d | 2019-09-12 | 2019-09-18 | CO1010 | -5d | 0d |  |  |  |  | CLIN 0003 | MICK | DE | DEMOINT |
| CO1320 |  | Demolition outside |  | 5d | 2019-09-12 | 2019-09-18 | CO1010 | 166d | 0d |  |  | Lump Sum Price [32000 h] | 32,000 | CLIN 0002 | MICK | EX | DEMOEXT |
| CO1030 |  | SSHO approval Site mobilization Haz. Demolition work | milestone | 0d | 2019-09-19 | 2019-09-19 | CO1020 | -5d | 0d |  |  |  |  | CLIN 0003 | MICK | DE | DEMOINT |
| CO1040 |  | Hazardous Demolition work |  | 10d | 2019-09-19 | 2019-10-02 | CO1030 | -5d | 0d |  |  | Lump Sum Price [47718.4 h] | 47,718.4 | CLIN 0003 | MICK | DE | DEMOINT |
| CO1330 |  | Excavation work |  | 10d | 2019-09-19 | 2019-10-02 | CO1320 | 166d | 0d |  |  | Lump Sum Price [20000 h] | 20,000 | CLIN 0002 | MICK | EX | EXCAVATION |
| CO1050 |  | Demolition Work - non bearing elements |  | 10d | 2019-10-04 | 2019-10-18 | CO1040 | -5d | 0d |  |  | Lump Sum Price [47718.4 h] | 47,718.4 | CLIN 0003 | MICK | DE | DEMOINT |
| CO1340 |  | Waterproofing |  | 20d | 2019-10-04 | 2019-11-04 | CO1330 | 166d | 0d |  |  | Lump Sum Price [53000 h] | 53,000 | CLIN 0002 | MICK | EX | SHELL |
| CO1060 |  | Demolition Work - structural elements |  | 25d | 2019-10-21 | 2019-11-26 | CO1050 | -5d | 0d |  |  | Lump Sum Price [143155 h] | 143,155.2 | CLIN 0003 | MICK | DE | DEMOINT |
| CO1090 |  | Procurement Prefab concrete stairs |  | 15d | 2019-11-05 | 2019-11-26 |  | 25d | 0d | as late as possible |  |  |  | CLIN 0002 | MICK | CO | STAIRS |
| CO1350 |  | Backfilling |  | 5d | 2019-11-05 | 2019-11-12 | CO1340 | 166d | 0d |  |  | Lump Sum Price [10000 h] | 10,000 | CLIN 0002 | MICK | EX | EXCAVATION |
| CO1360 |  | Errection of scaffold |  | 5d | 2019-11-13 | 2019-11-19 | CO1350 | 166d | 0d |  |  | Lump Sum Price [26000 h] | 26,000 | CLIN 0002 | MICK | EX | SCAFFOLD |
| CO1370 |  | Roofing work |  | 20d | 2019-11-20 | 2019-12-18 | CO1360 | 166d | 0d |  |  | Lump Sum Price [135000 h] | 135,000 | CLIN 0002 | MICK | EX | ROOF |
| CO1070 |  | Formwork |  | 7d | 2019-11-27 | 2019-12-06 | CO1060 | -5d | 0d |  |  | Lump Sum Price [9499.54 h] | 9,499.54 | CLIN 0002 | MICK | CO | STAIRS |
| CO1110 |  | Prefab concrete stairs |  | 10d | 2019-11-27 | 2019-12-11 | CO1060, CO1090 | 25d | 30d |  |  | Lump Sum Price [56430 h] | 56,430 | CLIN 0002 | MICK | CO | STAIRS |
| CO1080 |  | Concrete Work |  | 30d | 2019-12-09 | 2020-01-23 | CO1070 | -5d | 0d |  |  | Lump Sum Price [67700 h] | 67,700 | CLIN 0002 | MICK | CO | STAIRS |
| CO1380 |  | Removal of scaffold |  | 5d | 2019-12-19 | 2019-12-27 | CO1370 | 166d | 171d |  |  | Lump Sum Price [20000 h] | 20,000 | CLIN 0002 | MICK | EX | SCAFFOLD |
| CO1100 |  | Removal of Formwork |  | 3d | 2020-01-24 | 2020-01-28 | CO1080 | -5d | 0d |  |  | Lump Sum Price [6000 h] | 6,000 | CLIN 0002 | MICK | CO | STAIRS |
| CO1120 |  | Dry construction walls |  | 20d | 2020-01-29 | 2020-02-26 | CO1110, CO1100 | -5d | 0d |  |  | Lump Sum Price [46600 h] | 46,600 | CLIN 0002 | MICK | CO | DRYWALL |
| CO1190 |  | Elevator |  | 10d | 2020-01-29 | 2020-02-11 | CO1100 | 45d | 0d |  |  | Lump Sum Price [60000 h] | 60,000 | CLIN 0002 | MICK | CO | ELECTRIC |
| CO1130 |  | Sanitary work |  | 25d | 2020-02-27 | 2020-04-01 | CO1120 | -5d | 0d |  |  | Lump Sum Price [424500 h] | 424,500 | CLIN 0002 | MICK | CO | SERVICES |
| CO1140 |  | Heating work |  | 25d | 2020-02-27 | 2020-04-01 | CO1120 | -5d | 0d |  |  | Lump Sum Price [445500 h] | 445,500 | CLIN 0002 | MICK | CO | HVAC |
| CO1150 |  | Ventilation Systems |  | 25d | 2020-02-27 | 2020-04-01 | CO1120 | -5d | 0d |  |  | Lump Sum Price [212300 h] | 212,300 | CLIN 0002 | MICK | CO | HVAC |
| CO1160 |  | Sprinkler Work |  | 25d | 2020-02-27 | 2020-04-01 | CO1120 | -5d | 0d |  |  | Lump Sum Price [242800 h] | 242,800 | CLIN 0002 | MICK | CO | ELECTRIC |
| CO1170 |  | Electrical Work |  | 25d | 2020-02-27 | 2020-04-01 | CO1120 | -5d | 0d |  |  | Lump Sum Price [1000000 h] | 1,000,000 | CLIN 0002 | MICK | CO | ELECTRIC |
| CO1180 |  | Option: CCTV, ESS |  | 20d | 2020-02-27 | 2020-03-25 | CO1120 | 0d | 5d |  |  | Lump Sum Price [25000 h] | 25,000 | CLIN 0007 | MICK | CO | ELECTRIC |
| CO1200 |  | Dry Construction Walls Finishing |  | 15d | 2020-04-02 | 2020-04-24 | CO1130, CO1140, CO1150, CO1160, CO1170, CO1180 | -5d | 0d |  |  | Lump Sum Price [14000 h] | 14,000 | CLIN 0002 | MICK | CO | DRYWALL |
| CO1230 |  | Procurement ATFP windows |  | 40d | 2020-04-02 | 2020-06-04 |  | -5d | 0d | as late as possible |  |  |  | CLIN 0002 | MICK | CO | WINDOWS |
| CO1210 |  | Screed |  | 25d | 2020-04-27 | 2020-06-04 | CO1200, CO1190 | -5d | 0d |  |  | Lump Sum Price [40000 h] | 40,000 | CLIN 0002 | MICK | CO | SCREED |
| CO1220 |  | Outside doors |  | 5d | 2020-04-27 | 2020-05-04 | CO1200 | 26d | 31d |  |  | Lump Sum Price [13300 h] | 13,300 | CLIN 0002 | MICK | CO | METAL |
| CO1240 |  | ATFP Windows |  | 11d | 2020-06-05 | 2020-06-22 | CO1230, CO1210 | -5d | 0d |  |  | Lump Sum Price [333000 h] | 333,000 | CLIN 0002 | MICK | CO | WINDOWS |
| CO1310 |  | Tile Work |  | 20d | 2020-06-05 | 2020-07-06 | CO1210 | 41d | 46d |  |  | Lump Sum Price [20000 h] | 20,000 | CLIN 0002 | MICK | CO | TILES |
| CO1250 |  | Plaster Work |  | 20d | 2020-06-23 | 2020-07-21 | CO1200, CO1220, CO1240 | -5d | 0d |  |  | Lump Sum Price [115415 h] | 115,415 | CLIN 0002 | MICK | CO | PLASTER |
| CO1260 |  | Suspended Ceilings |  | 15d | 2020-07-22 | 2020-08-11 | CO1210, CO1250 | -5d | 0d |  |  | Lump Sum Price [14000 h] | 14,000 | CLIN 0002 | MICK | CO | DRYWALL |
| CO1290 |  | Doors |  | 10d | 2020-07-22 | 2020-08-04 | CO1250 | 20d | 25d |  |  | Lump Sum Price [66300 h] | 66,300 | CLIN 0002 | MICK | CO | METAL |
| CO1270 |  | Painting Work |  | 15d | 2020-08-12 | 2020-09-01 | CO1260 | 0d | 5d |  |  | Lump Sum Price [33000 h] | 33,000 | CLIN 0002 | MICK | CO | PLASTER |
| CO1280 |  | Flooring Work |  | 20d | 2020-08-12 | 2020-09-09 | CO1260 | -5d | 0d |  |  | Lump Sum Price [167000 h] | 167,000 | CLIN 0002 | MICK | CO | FLOORING |
| CO1300 |  | Built-in furniture |  | 20d | 2020-08-12 | 2020-09-09 | CO1260 | -5d | 0d |  |  | Lump Sum Price [133600 h] | 133,600 | CLIN 0002 | MICK | CO | JOINERY |

Notes:
- CO1050: Expenses: Vorgabe-Einnahmen 0
- CO1060: Expenses: Vorgabe-Einnahmen 0

| ID | WBS | Activity | Type | Duration | Start | Finish | Predecessors | Total float | Free float | Constraint | Calendar | Resources | Cost | BIDI | RESP | PHAS |
| --- | --- | --- | --- | --- | --- | --- | --- | --- | --- | --- | --- | --- | --- | --- | --- | --- |
|  | 870 | **Commissioning, Testing, Finals** |  |  | 2020-01-24 | 2021-01-18 |  |  |  |  |  |  |  |  |  |  |
| CO2080 |  | Approval structural proofing engineer (Prüfstatiker) |  | 1d | 2020-01-24 | 2020-01-24 | CO1080 | 148d | 153d |  |  |  |  | CLIN 0002 | MICK | CL |
| CO2070 |  | Approval Elevator (TÜV) |  | 1d | 2020-02-12 | 2020-02-12 | CO1190 | 135d | 140d |  |  |  |  | CLIN 0002 | MICK | CL |
| CO2060 |  | Approval Fire protection specialist |  | 1d | 2020-04-02 | 2020-04-02 | CO1160, CO1170 | 100d | 105d |  |  |  |  | CLIN 0002 | MICK | CL |
| CO2090 |  | Approval Sprinkler sytem (VDS) |  | 2d | 2020-04-02 | 2020-04-03 | CO1160 | 99d | 104d |  |  |  |  | CLIN 0002 | MICK | CL |
| CO2010 |  | Review Control Testing Plan |  | 30d | 2020-08-10 | 2020-09-09 | CO2000 | -8d | 0d | as late as possible | Calendar Dates |  |  | CLIN 0002 | GOVT | CL |
| CO2040 |  | Review Building Commissioning Plan |  | 30d | 2020-08-10 | 2020-09-09 | CO2030 | -8d | 0d | as late as possible | Calendar Dates |  |  | CLIN 0002 | GOVT | CL |
| CO2000 |  | Submittal Control testing plan | milestone | 0d | 2020-08-11 | 2020-08-11 |  | -6d | 0d | as late as possible |  |  |  | CLIN 0002 | MICK | CL |
| CO2030 |  | Building Commissioning Plan Submittal | milestone | 0d | 2020-08-11 | 2020-08-11 |  | -6d | 0d | as late as possible |  |  |  | CLIN 0002 | MICK | CL |
| CO2230 |  | Warranty Management Plan Submittal | milestone | 0d | 2020-08-21 | 2020-08-21 |  | -5d | 0d | as late as possible |  |  |  | CLIN 0002 | MICK | CL |
| CO2020 |  | Approval Control Testing Plan | milestone | 0d | 2020-09-09 | 2020-09-09 | CO2010 | -5d | 0d | as late as possible |  |  |  | CLIN 0002 | GOVT | CL |
| CO2050 |  | Approval Building Commissioning Plan | milestone | 0d | 2020-09-09 | 2020-09-09 | CO2040 | -5d | 0d | as late as possible |  |  |  | CLIN 0002 | GOVT | CL |
| CO2100 |  | Start Commissioning, Testing, Finals | milestone | 0d | 2020-09-10 | 2020-09-10 | CO1270, CO1280, CO1290, CO1300, CO1310, CO1380, CO2020, CO2050, CO2060, CO2070, CO2080, CO2090 | -5d | 0d |  |  |  |  | CLIN 0002 | MICK | CL |
| CO2110 |  | Bldg. Commissioning + Testing |  | 12d | 2020-09-10 | 2020-09-25 | CO2100 | -5d | 0d |  |  |  |  | CLIN 0002 | MICK | CL |
| CO2120 |  | Other Systems Testing (MNS/Hirsch/IDS, etc.) |  | 5d | 2020-09-10 | 2020-09-16 | CO2100 | 2d | 7d |  |  |  |  | CLIN 0002 | MICK | CL |
| CO2130 |  | Contractors Pre-Final inspection | milestone | 0d | 2020-09-25 | 2020-09-25 | CO2110, CO2120 | -5d | 0d |  |  |  |  | CLIN 0002 | MICK | CL |
| CO2140 |  | Corrections of punch list |  | 5d | 2020-09-28 | 2020-10-02 | CO2130 | -5d | 0d |  |  |  |  | CLIN 0002 | MICK | CL |
| CO2240 |  | Initial record drawings Submittal | milestone | 0d | 2020-09-28 | 2020-09-28 | CO2130 | 5d | 0d |  |  |  |  | CLIN 0002 | MICK | CL |
| CO2250 |  | Initial Record Drawings Review |  | 90d | 2020-09-28 | 2020-12-27 | CO2240 | 4.38d | 0d |  | Calendar Dates |  |  | CLIN 0002 | GOVT | CL |
| CO2150 |  | GOV Pre-Final | milestone | 0d | 2020-10-05 | 2020-10-05 | CO2140, CO2230 FS+30d | -5d | 0d |  |  |  |  | CLIN 0002 | GOVT | CL |
| CO2160 |  | HN final inspection |  | 1d | 2020-10-05 | 2020-10-05 | CO2150 | 4d | 9d |  |  |  |  | CLIN 0002 | HN | CL |
| CO2170 |  | Corrections of punch list |  | 10d | 2020-10-05 | 2020-10-19 | CO2150 | -5d | 0d |  |  | Lump Sum Price [10000 h] | 10,000 | CLIN 0002 | MICK | CL |
| CO2180 |  | Final Inspection | milestone | 0d | 2020-10-19 | 2020-10-19 | CO2170, CO2160 | -5d | 0d |  |  |  |  | CLIN 0002 | GOVT | CL |
| CO2190 |  | End of Construction 8108 | milestone | 0d | 2020-10-19 | 2020-10-19 | CO2180 | -5d | 0d |  |  |  |  | CLIN 0002 | MICK | CL |
| CO2200 |  | Preparation Closeout Documentation |  | 90d | 2020-10-19 | 2021-01-17 | CO2190 | -2d | 0.62d |  | Calendar Dates | Lump Sum Price [53423.9 h] | 53,423.92 | CLIN 0005 | MICK | CL |
| CO2210 |  | Preparation O&M Manuals |  | 30d | 2020-10-19 | 2020-11-18 | CO2190 | 58d | 60.62d |  | Calendar Dates | Lump Sum Price [53423.9 h] | 53,423.92 | CLIN 0005 | MICK | CL |
| CO2220 |  | Submittal Final Record Drawings |  | 30d | 2020-10-19 | 2020-11-18 | CO2190 | 58d | 60.62d |  | Calendar Dates |  |  | CLIN 0002 | MICK | CL |
| CO2260 |  | Initial Record Drawing Approval | milestone | 0d | 2020-12-27 | 2020-12-27 | CO2250 | 4.38d | 0d |  | Calendar Dates |  |  | CLIN 0002 | GOVT | CL |
| CO2270 |  | Corrections Initial Record Drawings |  | 15d | 2020-12-27 | 2021-01-11 | CO2260 | 4.38d | 7d |  | Calendar Dates |  |  | CLIN 0002 | MICK | CL |
| CO2280 |  | Warranty Tags Submittal | milestone | 0d | 2021-01-06 | 2021-01-06 | CO2150 | 8d |  | start on or after 2021-01-06 |  |  |  | CLIN 0002 | MICK | CL |
| CO2290 |  | Space Parts Data Submittal | milestone | 0d | 2021-01-06 | 2021-01-06 | CO2150 | 8d |  | start on or after 2021-01-06 |  |  |  | CLIN 0002 | MICK | CL |
| CO2300 |  | Equipment Warranties Submittal | milestone | 0d | 2021-01-06 | 2021-01-06 | CO2150 | 8d |  | start on or after 2021-01-06 |  |  |  | CLIN 0002 | MICK | CL |
| CO2310 |  | Posted Instructions Submittal | milestone | 0d | 2021-01-06 | 2021-01-06 | CO2150 | 8d |  | start on or after 2021-01-06 |  |  |  | CLIN 0002 | MICK | CL |
| CO2320 |  | Local Warranty Contractor Submittal | milestone | 0d | 2021-01-06 | 2021-01-06 | CO2150 | 8d |  | start on or after 2021-01-06 |  |  |  | CLIN 0002 | MICK | CL |
| CO2330 |  | Warranty Repair Report | milestone | 0d | 2021-01-06 | 2021-01-06 | CO2150 | 8d |  | start on or after 2021-01-06 |  |  |  | CLIN 0002 | MICK | CL |
| CO2340 |  | Data Package List Submittal | milestone | 0d | 2021-01-06 | 2021-01-06 | CO2150 | 8d |  | start on or after 2021-01-06 |  |  |  | CLIN 0002 | MICK | CL |
| CO2350 |  | Q&M Database Submittal | milestone | 0d | 2021-01-06 | 2021-01-06 | CO2150 | 8d |  | start on or after 2021-01-06 |  |  |  | CLIN 0002 | MICK | CL |
| CO2360 |  | Training Plan Submittal | milestone | 0d | 2021-01-06 | 2021-01-06 | CO2150 | 8d |  | start on or after 2021-01-06 |  |  |  | CLIN 0002 | MICK | CL |
| CO2370 |  | Training Outline Submittal | milestone | 0d | 2021-01-06 | 2021-01-06 | CO2150 | 8d |  | start on or after 2021-01-06 |  |  |  | CLIN 0002 | MICK | CL |
| CO2380 |  | Training Content Submittal | milestone | 0d | 2021-01-06 | 2021-01-06 | CO2150 | 8d |  | start on or after 2021-01-06 |  |  |  | CLIN 0002 | MICK | CL |
| CO2390 |  | Training Video Recording Submittal | milestone | 0d | 2021-01-06 | 2021-01-06 | CO2150 | 8d |  | start on or after 2021-01-06 |  |  |  | CLIN 0002 | MICK | CL |
| CO2400 |  | Validation of Video Completion Submittal | milestone | 0d | 2021-01-06 | 2021-01-06 | CO2150 | 8d |  | start on or after 2021-01-06 |  |  |  | CLIN 0002 | MICK | CL |
| CO2410 |  | Record / As-Built Drawing Submittal | milestone | 0d | 2021-01-06 | 2021-01-06 |  | 8d |  | start on or after 2021-01-06 |  |  |  |  |  |  |
| CO2420 |  | End Commissioning, Testing Finals | milestone | 0d | 2021-01-18 | 2021-01-18 | CO2220, CO2280, CO2290, CO2300, CO2310, CO2320, CO2330, CO2340, CO2350, CO2360, CO2370, CO2380, CO2390, CO2400, CO2270, CO2200, CO2210 | 0d |  |  |  |  |  | CLIN 0002 | MICK | CL |

Notes:
- CO2200: Expenses: Vorgabe-Einnahmen 0

| ID | WBS | Activity | Type | Duration | Start | Finish | Predecessors | Total float | Free float | Constraint | Resources | Cost | BIDI | RESP | PHAS | FOW |
| --- | --- | --- | --- | --- | --- | --- | --- | --- | --- | --- | --- | --- | --- | --- | --- | --- |
|  | 1447 | **Bldg. 8228** |  |  | 2019-09-05 | 2021-01-06 |  |  |  |  |  |  |  |  |  |  |
| CO3000 |  | Start of Construction 8228 | milestone | 0d | 2019-09-05 | 2019-09-05 | DE1590, PC1030, PC1060 | 3d | 0d |  |  |  | CLIN 0005 | MICK | CO |  |
| CO3010 |  | Site mobilization |  | 5d | 2019-09-05 | 2019-09-11 | CO3000 | 3d | 0d |  |  |  | CLIN 0005 | MICK | CO |  |
| CO3020 |  | Site mobilization Haz. Demolition work |  | 5d | 2019-09-12 | 2019-09-18 | CO3010 | 3d | 0d |  |  |  | CLIN 0006 | MICK | DE | DEMOINT |
| CO3280 |  | Demolition outside |  | 5d | 2019-09-12 | 2019-09-18 | CO3010 | 166d | 0d |  | Lump Sum Price [60000 h] | 60,000 | CLIN 0005 | MICK | EX | DEMOEXT |
| CO3030 |  | SSHO approval Site mobilization Haz. Demolition work | milestone | 0d | 2019-09-19 | 2019-09-19 | CO3020 | 3d | 0d |  |  |  | CLIN 0006 | MICK | DE | DEMOINT |
| CO3040 |  | Hazardous Demolition work |  | 10d | 2019-09-19 | 2019-10-02 | CO3030 | 3d | 0d |  | Lump Sum Price [100800 h] | 100,800 | CLIN 0006 | MICK | DE | DEMOINT |
| CO3290 |  | Excavation work |  | 10d | 2019-09-19 | 2019-10-02 | CO3280 | 166d | 0d |  | Lump Sum Price [40000 h] | 40,000 | CLIN 0005 | MICK | EX | EXCAVATION |
| CO3050 |  | Demolition Work - non bearing elements |  | 10d | 2019-10-04 | 2019-10-18 | CO3040 | 3d | 0d |  | Lump Sum Price [100800 h] | 100,800 | CLIN 0006 | MICK | DE | DEMOINT |
| CO3300 |  | Waterproofing |  | 20d | 2019-10-04 | 2019-11-04 | CO3290 | 166d | 0d |  | Lump Sum Price [100000 h] | 100,000 | CLIN 0005 | MICK | EX | SHELL |
| CO3060 |  | Demolition Work - structural elements |  | 25d | 2019-10-21 | 2019-11-26 | CO3050 | 3d | 0d |  | Lump Sum Price [300000 h] | 300,000 | CLIN 0006 | MICK | DE | DEMOINT |
| CO3310 |  | Backfilling |  | 5d | 2019-11-05 | 2019-11-12 | CO3300 | 166d | 0d |  | Lump Sum Price [20000 h] | 20,000 | CLIN 0005 | MICK | EX | EXCAVATION |
| CO3320 |  | Errection of scaffold |  | 5d | 2019-11-13 | 2019-11-19 | CO3310 | 166d | 0d |  | Lump Sum Price [32000 h] | 32,000 | CLIN 0005 | MICK | EX | SCAFFOLD |
| CO3330 |  | Roofing work |  | 20d | 2019-11-20 | 2019-12-18 | CO3320 | 166d | 0d |  | Lump Sum Price [208000 h] | 208,000 | CLIN 0005 | MICK | EX | ROOF |
| CO3070 |  | Concrete Work |  | 30d | 2019-11-27 | 2020-01-13 | CO3060 | 3d | 0d |  | Lump Sum Price [160000 h] | 160,000 | CLIN 0005 | MICK | CO | STAIRS |
| CO3340 |  | Removal of scaffold |  | 5d | 2019-12-19 | 2019-12-27 | CO3330 | 166d | 163d |  | Lump Sum Price [24000 h] | 24,000 | CLIN 0005 | MICK | EX | SCAFFOLD |
| CO3080 |  | Dry construction walls |  | 20d | 2020-01-14 | 2020-02-11 | CO3070 | 3d | 0d |  | Lump Sum Price [101775 h] | 101,775.49 | CLIN 0005 | MICK | CO | DRYWALL |
| CO3150 |  | Metal Construction Work |  | 15d | 2020-01-14 | 2020-02-04 | CO3070 | 121d | 118d |  | Lump Sum Price [112300 h] | 112,300 | CLIN 0005 | MICK | CO | METAL |
| CO3090 |  | Sanitary work |  | 25d | 2020-02-12 | 2020-03-18 | CO3080 | 3d | 0d |  | Lump Sum Price [329600 h] | 329,600 | CLIN 0005 | MICK | CO | SERVICES |
| CO3100 |  | Heating work |  | 25d | 2020-02-12 | 2020-03-18 | CO3080 | 3d | 0d |  | Lump Sum Price [329600 h] | 329,600 | CLIN 0005 | MICK | CO | HVAC |
| CO3110 |  | Ventilation Systems |  | 25d | 2020-02-12 | 2020-03-18 | CO3080 | 3d | 0d |  | Lump Sum Price [164800 h] | 164,800 | CLIN 0005 | MICK | CO | HVAC |
| CO3120 |  | Sprinkler Work |  | 25d | 2020-02-12 | 2020-03-18 | CO3080 | 3d | 0d |  | Lump Sum Price [300800 h] | 300,800 | CLIN 0005 | MICK | CO | ELECTRIC |
| CO3130 |  | Electrical Work |  | 25d | 2020-02-12 | 2020-03-18 | CO3080 | 3d | 0d |  | Lump Sum Price [1300000 h] | 1,300,000 | CLIN 0005 | MICK | CO | ELECTRIC |
| CO3140 |  | Option: CCTV, ESS |  | 20d | 2020-02-12 | 2020-03-11 | CO3080 | 8d | 5d |  | Lump Sum Price [25000 h] | 25,000 | CLIN 0008 | MICK | CO | ELECTRIC |
| CO3160 |  | Dry Construction Walls Finishing |  | 15d | 2020-03-19 | 2020-04-08 | CO3090, CO3100, CO3110, CO3120, CO3130, CO3140 | 3d | 0d |  | Lump Sum Price [70000 h] | 70,000 | CLIN 0005 | MICK | CO | DRYWALL |
| CO3190 |  | Procurement ATFP windows |  | 40d | 2020-03-19 | 2020-05-18 |  | 3d | 0d | as late as possible |  |  | CLIN 0005 | MICK | CO | WINDOWS |
| CO3170 |  | Screed |  | 25d | 2020-04-09 | 2020-05-18 | CO3160 | 3d | 0d |  | Lump Sum Price [52800 h] | 52,800 | CLIN 0005 | MICK | CO | SCREED |
| CO3180 |  | Outside doors |  | 5d | 2020-04-09 | 2020-04-17 | CO3160 | 36d | 33d |  | Lump Sum Price [16000 h] | 16,000 | CLIN 0005 | MICK | CO | METAL |
| CO3200 |  | ATFP Windows |  | 13d | 2020-05-19 | 2020-06-09 | CO3190, CO3170 | 3d | 0d |  | Lump Sum Price [385611 h] | 385,611 | CLIN 0005 | MICK | CO | WINDOWS |
| CO3270 |  | Tile Work |  | 20d | 2020-05-19 | 2020-06-19 | CO3170 | 51d | 48d |  | Lump Sum Price [24320 h] | 24,320 | CLIN 0005 | MICK | CO | TILES |
| CO3210 |  | Plaster Work |  | 20d | 2020-06-10 | 2020-07-09 | CO3160, CO3180, CO3200 | 3d | 0d |  | Lump Sum Price [22400 h] | 22,400 | CLIN 0005 | MICK | CO | PLASTER |
| CO3220 |  | Suspended Ceilings |  | 15d | 2020-07-10 | 2020-07-30 | CO3170, CO3210 | 3d | 0d |  | Lump Sum Price [70000 h] | 70,000 | CLIN 0005 | MICK | CO | DRYWALL |
| CO3250 |  | Doors |  | 10d | 2020-07-10 | 2020-07-23 | CO3210 | 28d | 25d |  | Lump Sum Price [80000 h] | 80,000 | CLIN 0005 | MICK | CO | METAL |
| CO3230 |  | Painting Work |  | 20d | 2020-07-31 | 2020-08-27 | CO3220, CO3150 | 3d | 0d |  | Lump Sum Price [40000 h] | 40,000 | CLIN 0005 | MICK | CO | PLASTER |
| CO3240 |  | Flooring Work |  | 20d | 2020-07-31 | 2020-08-27 | CO3220 | 3d | 0d |  | Lump Sum Price [124800 h] | 124,800 | CLIN 0005 | MICK | CO | FLOORING |
| CO3260 |  | Built-in furniture |  | 20d | 2020-07-31 | 2020-08-27 | CO3220 | 3d | 0d |  | Lump Sum Price [288000 h] | 288,000 | CLIN 0005 | MICK | CO | JOINERY |

Notes:
- CO3050: Expenses: Vorgabe-Einnahmen 0
- CO3060: Expenses: Vorgabe-Einnahmen 0

| ID | WBS | Activity | Type | Duration | Start | Finish | Predecessors | Total float | Free float | Constraint | Calendar | Resources | Cost | BIDI | RESP | PHAS |
| --- | --- | --- | --- | --- | --- | --- | --- | --- | --- | --- | --- | --- | --- | --- | --- | --- |
|  | 1448 | **Commissioning, Testing, Finals** |  |  | 2020-01-14 | 2021-01-06 |  |  |  |  |  |  |  |  |  |  |
| CO4070 |  | Approval structural proofing engineer (Prüfstatiker) |  | 1d | 2020-01-14 | 2020-01-14 | CO3070 | 155d | 152d |  |  |  |  | CLIN 0005 | MICK | CL |
| CO4060 |  | Approval Fire protection specialist |  | 1d | 2020-03-19 | 2020-03-19 | CO3120, CO3130 | 110d | 107d |  |  |  |  | CLIN 0005 | MICK | CL |
| CO4080 |  | Approval Sprinkler sytem (VDS) |  | 2d | 2020-03-19 | 2020-03-20 | CO3120 | 109d | 106d |  |  |  |  | CLIN 0005 | MICK | CL |
| CO4010 |  | Review Control Testing Plan |  | 30d | 2020-07-28 | 2020-08-27 | CO4000 | 5d | 0d | as late as possible | Calendar Dates |  |  | CLIN 0005 | GOVT | CL |
| CO4040 |  | Review Building Commissioning Plan |  | 30d | 2020-07-28 | 2020-08-27 | CO4030 | 5d | 0d | as late as possible | Calendar Dates |  |  | CLIN 0005 | GOVT | CL |
| CO4000 |  | Submittal Control testing plan | milestone | 0d | 2020-07-29 | 2020-07-29 |  | 3d | 0d | as late as possible |  |  |  | CLIN 0005 | MICK | CL |
| CO4030 |  | Building Commissioning Plan Submittal | milestone | 0d | 2020-07-29 | 2020-07-29 |  | 3d | 0d | as late as possible |  |  |  | CLIN 0005 | MICK | CL |
| CO4220 |  | Warranty Management Plan Submittal & Approval | milestone | 0d | 2020-08-11 | 2020-08-11 |  | 3d | 0d | as late as possible |  |  |  | CLIN 0005 | MICK | CL |
| CO4020 |  | Approval Control Testing Plan | milestone | 0d | 2020-08-27 | 2020-08-27 | CO4010 | 3d | 0d | as late as possible |  |  |  | CLIN 0005 | GOVT | CL |
| CO4050 |  | Approval Building Commissioning Plan | milestone | 0d | 2020-08-27 | 2020-08-27 | CO4040 | 3d | 0d | as late as possible |  |  |  | CLIN 0005 | GOVT | CL |
| CO4090 |  | Start Commissioning, Testing, Finals | milestone | 0d | 2020-08-28 | 2020-08-28 | CO3230, CO3240, CO3250, CO3260, CO3270, CO3340, CO4020, CO4050, CO4060, CO4070, CO4080 | 3d | 0d |  |  |  |  | CLIN 0005 | MICK | CL |
| CO4100 |  | Bldg. Commissioning + Testing |  | 12d | 2020-08-28 | 2020-09-15 | CO4090 | 3d | 0d |  |  |  |  | CLIN 0005 | MICK | CL |
| CO4110 |  | Other Systems Testing (MNS/Hirsch/IDS, etc.) |  | 5d | 2020-08-28 | 2020-09-03 | CO4090 | 10d | 7d |  |  |  |  | CLIN 0005 | MICK | CL |
| CO4120 |  | Contractors Pre-Final inspection | milestone | 0d | 2020-09-15 | 2020-09-15 | CO4100, CO4110 | 3d | 0d |  |  |  |  | CLIN 0005 | MICK | CL |
| CO4130 |  | Corrections of punch list |  | 5d | 2020-09-16 | 2020-09-22 | CO4120 | 3d | 0d |  |  |  |  | CLIN 0005 | MICK | CL |
| CO4140 |  | GOV Pre-Final | milestone | 0d | 2020-09-23 | 2020-09-23 | CO4130, CO4220 FS+30d | 3d | 0d |  |  |  |  | CLIN 0005 | GOVT | CL |
| CO4150 |  | HN final inspection |  | 1d | 2020-09-23 | 2020-09-23 | CO4140 | 12d | 9d |  |  |  |  | CLIN 0005 | HN | CL |
| CO4160 |  | Corrections of punch list |  | 10d | 2020-09-23 | 2020-10-06 | CO4140 | 3d | 0d |  |  | Lump Sum Price [10000 h] | 10,000 | CLIN 0005 | MICK | CL |
| CO4230 |  | Initial record drawings Submittal | milestone | 0d | 2020-09-23 | 2020-09-23 | CO4140 | 8d | 0d |  |  |  |  | CLIN 0005 | MICK | CL |
| CO4240 |  | Initial Record Drawings Review |  | 90d | 2020-09-23 | 2020-12-22 | CO4230 | 9.38d | 0d |  | Calendar Dates |  |  | CLIN 0005 | GOVT | CL |
| CO4170 |  | Final Inspection | milestone | 0d | 2020-10-06 | 2020-10-06 | CO4160, CO4150 | 3d | 0d |  |  |  |  | CLIN 0005 | MICK | CL |
| CO4180 |  | End of Construction 8228 | milestone | 0d | 2020-10-06 | 2020-10-06 | CO4170 | 3d | 0d |  |  |  |  | CLIN 0005 | MICK | CL |
| CO4190 |  | Preparation Closeout Documentation |  | 90d | 2020-10-06 | 2021-01-04 | CO4180 | 11d | 1.62d |  | Calendar Dates | Lump Sum Price [53423.9 h] | 53,423.92 | CLIN 0005 | MICK | CL |
| CO4200 |  | Preparation O&M Manuals |  | 30d | 2020-10-06 | 2020-11-05 | CO4180 | 71d | 61.62d |  | Calendar Dates | Lump Sum Price [53423.9 h] | 53,423.92 | CLIN 0005 | MICK | CL |
| CO4210 |  | Submittal Final Record Drawings |  | 30d | 2020-10-06 | 2020-11-05 | CO4180 | 71d | 61.62d |  | Calendar Dates |  |  | CLIN 0005 | MICK | CL |
| CO4250 |  | Record Drawing Approval | milestone | 0d | 2020-12-22 | 2020-12-22 | CO4240 | 9.38d | 0d |  | Calendar Dates |  |  | CLIN 0005 | GOVT | CL |
| CO4260 |  | Corrections Initial Record Drawings |  | 15d | 2020-12-22 | 2021-01-06 | CO4250 | 9.38d | 0d |  | Calendar Dates |  |  | CLIN 0005 | MICK | CL |
| CO4270 |  | Warranty Tags Submittal | milestone | 0d | 2021-01-06 | 2021-01-06 | CO4140 | 8d | 0d | start on or after 2021-01-06 |  |  |  | CLIN 0005 | MICK | CL |
| CO4280 |  | Space Parts Data Submittal | milestone | 0d | 2021-01-06 | 2021-01-06 | CO4140 | 8d | 0d | start on or after 2021-01-06 |  |  |  | CLIN 0005 | MICK | CL |
| CO4290 |  | Equipment Warranties Submittal | milestone | 0d | 2021-01-06 | 2021-01-06 | CO4140 | 8d | 0d | start on or after 2021-01-06 |  |  |  | CLIN 0005 | MICK | CL |
| CO4300 |  | Posted Instructions Submittal | milestone | 0d | 2021-01-06 | 2021-01-06 | CO4140 | 8d | 0d | start on or after 2021-01-06 |  |  |  | CLIN 0005 | MICK | CL |
| CO4310 |  | Local Warranty Contractor Submittal | milestone | 0d | 2021-01-06 | 2021-01-06 | CO4140 | 8d | 0d | start on or after 2021-01-06 |  |  |  | CLIN 0005 | MICK | CL |
| CO4320 |  | Warranty Repair Report | milestone | 0d | 2021-01-06 | 2021-01-06 | CO4140 | 8d | 0d | start on or after 2021-01-06 |  |  |  | CLIN 0005 | MICK | CL |
| CO4330 |  | Data Package List Submittal | milestone | 0d | 2021-01-06 | 2021-01-06 | CO4140 | 8d | 0d | start on or after 2021-01-06 |  |  |  | CLIN 0005 | MICK | CL |
| CO4340 |  | Q&M Database Submittal | milestone | 0d | 2021-01-06 | 2021-01-06 | CO4140 | 8d | 0d | start on or after 2021-01-06 |  |  |  | CLIN 0005 | MICK | CL |
| CO4350 |  | Training Plan Submittal | milestone | 0d | 2021-01-06 | 2021-01-06 | CO4140 | 8d | 0d | start on or after 2021-01-06 |  |  |  | CLIN 0005 | MICK | CL |
| CO4360 |  | Training Outline Submittal | milestone | 0d | 2021-01-06 | 2021-01-06 | CO4140 | 8d | 0d | start on or after 2021-01-06 |  |  |  | CLIN 0005 | MICK | CL |
| CO4370 |  | Training Content Submittal | milestone | 0d | 2021-01-06 | 2021-01-06 | CO4140 | 8d | 0d | start on or after 2021-01-06 |  |  |  | CLIN 0005 | MICK | CL |
| CO4380 |  | Training Video Recording Submittal | milestone | 0d | 2021-01-06 | 2021-01-06 | CO4140 | 8d | 0d | start on or after 2021-01-06 |  |  |  | CLIN 0005 | MICK | CL |
| CO4390 |  | Validation of Video Completion Submittal | milestone | 0d | 2021-01-06 | 2021-01-06 | CO4140 | 8d | 0d | start on or after 2021-01-06 |  |  |  | CLIN 0005 | MICK | CL |
| CO4400 |  | Record / As-Built Drawing Submittal | milestone | 0d | 2021-01-06 | 2021-01-06 | CO4260 | 8d | 0d |  |  |  |  |  |  |  |
| CO4410 |  | End Commissioning, Testing Finals | milestone | 0d | 2021-01-06 | 2021-01-06 | CO4210, CO4190, CO4200, CO4270, CO4280, CO4290, CO4300, CO4310, CO4320, CO4330, CO4340, CO4350, CO4360, CO4370, CO4380, CO4390, CO4260, CO4400 | 8d |  |  |  |  |  | CLIN 0005 | MICK | CL |

Notes:
- CO4190: Expenses: Vorgabe-Einnahmen 0

## Activity codes

| Code | Value | Meaning |
| --- | --- | --- |
| BIDI | CLIN 0001 | CLIN 0001: Bldg 8108: Design |
| BIDI | CLIN 0002 | CLIN 0002: Bldg 8108: Construction |
| BIDI | CLIN 0003 | CLIN 0003: Bldg 8108: Demolition |
| BIDI | CLIN 0004 | CLIN 0004: Bldg 8228: Design |
| BIDI | CLIN 0005 | CLIN 0005: Bldg 8228: Construction |
| BIDI | CLIN 0006 | CLIN 0006: Bldg 8228: Demolition |
| BIDI | CLIN 0007 | CLIN 0007: Bldg 8108: Option 1: CCTV & ESS |
| BIDI | CLIN 0008 | CLIN 0008: Bldg 8228: Option 1: CCTV & ESS |
| FOW | DEMOEXT | Exterior Demolition Work |
| FOW | DEMOINT | Interior Demolition Work |
| FOW | DRYWALL | Drywall Construction |
| FOW | ELECTRIC | Electrical & Communication Systems |
| FOW | EXCAVATION | Earth Work |
| FOW | FLOORING | Flooring Work |
| FOW | HVAC | Heating, Ventilation, AC |
| FOW | JOINERY | Joinery & Cabinets |
| FOW | METAL | Metal Works |
| FOW | PLASTER | Plaster & Painting Work |
| FOW | ROOF | Carpenter and Roofing |
| FOW | SCAFFOLD | Scaffolding |
| FOW | SCREED | Screed work |
| FOW | SERVICES | Building Services |
| FOW | SHELL | Building Shell |
| FOW | STAIRS | Stairs and Ramps |
| FOW | TILES | Tile Work |
| FOW | WINDOWS | Windows |
| PHAS | CD | Contractual Dates |
| PHAS | CL | CloseOut |
| PHAS | CO | Construction Work |
| PHAS | DE | Demolition Work |
| PHAS | DS | Design |
| PHAS | EX | Exterior Work |
| RESP | GOVT | GOVERNMENT |
| RESP | HN | HOST NATION |
| RESP | MICK | MICKAN |

# Renovate Buildings 8108 and 8228 Smith Barracks Preliminary Schedule

Schedule from Primavera P6, 2018-09-28 to 2018-09-28, data date 2018-09-28.

## Schedule

| ID | WBS | Activity | Duration | Start | Finish | Total float | Free float |
| --- | --- | --- | --- | --- | --- | --- | --- |
|  | 779 | **Overall Schedule** |  | 2018-09-28 | 2018-09-28 |  |  |
|  | 417 | **Contractual Dates** |  |  |  |  |  |
|  | 1 | **Pre-Design Submittals** |  | 2018-09-28 | 2018-09-28 |  |  |
| A1066 |  | Design QC Plan approval | 0d | 2018-09-28 | 2018-09-28 | 103d | 108d |
|  | 435 | **Design Schedule** |  |  |  |  |  |
|  | 1396 | **Design Bldg. 8108** |  |  |  |  |  |
|  | 1407 | **Design Bldg. 8228** |  |  |  |  |  |
|  | 2 | **Pre-Construction Submittals** |  |  |  |  |  |
|  | 133 | **Construction** |  |  |  |  |  |
|  | 611 | **Bldg. 8108** |  |  |  |  |  |
|  | 870 | **Commissioning, Testing, Finals** |  |  |  |  |  |
|  | 1447 | **Bldg. 8228** |  |  |  |  |  |
|  | 1448 | **Commissioning, Testing, Finals** |  |  |  |  |  |
