# TO0013 Renovate Bldg. 1036

Schedule from Primavera P6, 2011-09-29 to 2012-11-08, data date 2012-09-03, A marks actual dates.

## Calendars

- 5 days: Mon-Fri 08:00-12:00, 13:00-17:00; Sat-Sun off. Exceptions (off unless hours are given): 2011-12-26 to 2011-12-30, 2012-01-02 to 2012-01-06, 2012-04-06, 2012-04-09, 2012-05-01, 2012-05-17, 2012-05-28, 2012-06-07, 2012-10-03.
- 7 days: Mon-Fri 08:00-12:00, 13:00-17:00; Sat-Sun 08:00-16:00.

## Schedule

| ID | Activity | Type | Duration | Start | Finish | Predecessors | Complete | Remaining | Planned start | Planned finish | Total float | Free float | Constraint | Calendar | Phase |
| --- | --- | --- | --- | --- | --- | --- | --- | --- | --- | --- | --- | --- | --- | --- | --- |
| A1260 | NTP | milestone | 0d | 2011-09-29 A | 2011-09-29 A |  | 100% |  | 2012-02-13 | 2012-02-13 |  |  |  |  | P0 |
| A1270 | Construction Period |  | 364d | 2011-09-29 A | 2012-11-08 | A1260 | 82% | 67d | 2011-09-29 | 2012-09-26 | 0d |  |  | 7 days | P0 |
| A1020 | Demolition |  | 5d | 2011-12-05 A | 2011-12-09 A |  | 100% |  |  |  |  |  | start on or after 2011-12-05 |  | P1 |
| A1120 | Protection of doors |  | 3d | 2011-12-14 A | 2011-12-19 A |  | 100% |  |  |  |  |  | start on or after 2011-12-14 |  | P3 |
| A1170 | Painting Floor |  | 4d | 2011-12-19 A | 2011-12-23 A | A1120 | 100% |  |  |  |  |  |  |  | P3 |
| A1240 | Cleanup |  | 2d | 2011-12-21 A | 2011-12-23 A | A1170 FF | 100% |  |  |  |  |  |  |  | P3 |
| A1301 | Site Mobilization |  | 5d | 2012-01-09 A | 2012-01-13 A |  | 100% |  |  |  |  |  | start on or after 2012-01-09 |  | P0 |
| A1060 | Dry construction |  | 5d | 2012-01-16 A | 2012-01-23 A |  | 100% |  |  |  |  |  | as late as possible |  | P1 |
| A1050 | Painting Work |  | 5d | 2012-01-24 A | 2012-01-31 A | A1060 | 100% |  | 2011-09-29 | 2011-10-05 |  |  |  |  | P1 |
| A1070 | Electrical Work |  | 5d | 2012-01-30 A | 2012-02-06 A | A1061 FS-5d | 100% |  |  |  |  |  |  |  | P1 |
| A1061 | Flooring |  | 5d | 2012-02-13 A | 2012-02-17 A | A1060 | 100% |  |  |  |  |  | start on or after 2012-02-13 |  | P1 |
| A1271 | Demolition Electrical |  | 3.5d | 2012-04-02 A | 2012-04-05 A |  | 100% |  |  |  |  |  | start on or after 2012-04-02 |  | P2 |
| A1280 | Demolition Work Walls Ceilings |  | 10d | 2012-04-02 A | 2012-04-18 A |  | 100% |  |  |  |  |  | start on or after 2012-04-02 |  | P2 |
| A1272 | Demolition Asbestos Hall |  | 8.44d | 2012-05-07 A | 2012-05-18 A |  | 100% |  |  |  |  |  | start on or after 2012-05-07 |  | P2 |
| A1290 | Demolition work Windows |  | 13d | 2012-05-21 A | 2012-06-08 A | A1272 | 100% |  |  |  |  |  |  |  | P2 |
| A1430 | Electrical Various |  | 30d | 2012-06-04 A | 2012-10-26 |  |  | 39d | 2012-06-04 | 2012-07-17 | 9d |  | start on or after 2012-06-04 |  | P2 |
| A1291 | Dry construction walls |  | 25d | 2012-06-11 A | 2012-07-13 A | A1290 | 100% |  |  |  |  |  | start on or after 2012-04-10 |  | P2 |
| A1510 | Demolition windows to hangar, block with masonry |  | 5d | 2012-06-11 A | 2012-06-15 A |  | 100% |  |  |  |  |  | start on or after 2012-06-11 |  | P0 |
| A1420 | Electrical Rough |  | 14.77d | 2012-06-11 A | 2012-06-29 A |  | 100% |  |  |  |  |  | start on or after 2012-06-11 |  | P2 |
| A1310 | Windows |  | 5d | 2012-06-27 A | 2012-07-06 A |  | 100% |  | 2012-06-18 | 2012-06-22 |  |  | start on or after 2012-06-18 |  | P2 |
| A1300 | Dry construction ceilings |  | 14.5d | 2012-07-16 A | 2012-09-21 |  |  | 14.5d | 2012-09-03 | 2012-09-21 | 33.5d |  | start on or after 2012-07-09 |  | P2 |
| A1311 | Scaffold |  | 5d | 2012-07-16 A | 2012-07-20 A |  | 100% |  | 2012-09-03 | 2012-09-07 |  |  | start on or after 2012-07-16 |  | P2 |
| A1312 | Patching Facade / Painting |  | 10d | 2012-07-23 A | 2012-09-28 | A1311 |  | 20d | 2012-09-03 | 2012-09-14 | 23d | 0d |  |  | P2 |
| A1449 | Prep A/C | milestone | 0d | 2012-08-13 A | 2012-08-13 A |  | 100% |  | 2012-09-03 | 2012-09-03 |  |  | start on 2012-07-10 |  | P2 |
| A1450 | A/C Rough |  | 15d | 2012-08-13 A | 2012-09-14 | A1449 | 33% | 10d | 2012-09-03 | 2012-09-21 | 38d |  |  |  | P2 |
| A1499 | Sprinkler extension |  | 5d | 2012-08-13 A | 2012-09-14 |  |  | 10d | 2012-09-03 | 2012-09-07 | 38d |  | start on or after 2012-07-16 |  | P2 |
| A1440 | Separation Wall |  | 5d | 2012-08-20 A | 2012-08-20 A |  | 100% |  | 2012-09-03 | 2012-09-07 |  |  | start on or after 2012-08-13 |  | P2 |
| A1490 | Heating Repair |  | 5d | 2012-08-27 A | 2012-09-07 |  |  | 5d | 2012-09-03 | 2012-09-07 | 38d | 0d | start on or after 2012-07-30 |  | P2 |
| A1390 | Flooring PVC |  | 10d | 2012-09-03 | 2012-09-14 |  |  |  |  |  | 38d |  | start on or after 2012-07-30 |  | P2 |
| A1491 | Painting Radiators |  | 5d | 2012-09-10 | 2012-09-14 | A1490 |  |  |  |  | 38d |  | start on or after 2012-07-30 |  | P2 |
| A1340 | Doors |  | 14d | 2012-09-17 | 2012-10-05 |  |  |  |  |  | 24d |  | start on or after 2012-09-17 |  | P2 |
| A1370 | Painting |  | 20d | 2012-09-17 | 2012-10-15 |  |  |  |  |  | 18d |  | start on or after 2012-09-17 |  | P2 |
| A1380 | Flooring Carpet |  | 10d | 2012-09-17 | 2012-09-28 |  |  |  |  |  | 28d |  | start on or after 2012-09-17 |  | P2 |
| A1480 | A/C FInish |  | 20d | 2012-09-17 | 2012-10-15 |  |  |  |  |  | 1d |  | start on or after 2012-09-17 |  | P2 |
| A1313 | Metal construction |  | 5d | 2012-09-24 | 2012-09-28 | A1312 FS-5d |  |  |  |  | 23d | 0d |  |  | P2 |
| A1314 | Scaffold removal |  | 5d | 2012-10-01 | 2012-10-08 | A1313 |  |  |  |  | 23d |  |  |  | P2 |
| A1399 | Prep Tiling | milestone | 0d | 2012-10-01 | 2012-10-01 |  |  |  |  |  | 0d |  | start on 2012-10-01 |  | P2 |
| A1400 | Tiling Work |  | 14d | 2012-10-01 | 2012-10-19 | A1399 |  |  |  |  | 0d |  |  |  | P2 |
| A1345 | Blinds |  | 4.5d | 2012-10-08 | 2012-10-12 |  |  |  |  |  | 19.5d |  | start on or after 2012-10-08 |  | P2 |
| A1500 | Cleanup |  | 3d | 2012-10-17 | 2012-10-19 | A1400 FS-3d, A1480 |  |  |  |  | 0d |  | start on or after 2012-08-20 |  | P2 |
| A1518 | QC Punch-list inspection |  | 2d | 2012-10-22 | 2012-10-23 | A1500 |  |  |  |  | 0d |  | as late as possible |  | Cl |
| A1519 | Removing deficiencies |  | 4d | 2012-10-24 | 2012-10-29 | A1518 |  |  |  |  | 0d |  | as late as possible |  | Cl |
| A1520 | Testing A/C |  | 2d | 2012-10-30 | 2012-10-31 | A1519 |  |  |  |  | 0d |  | as late as possible |  | Cl |
| A1530 | User Maintenance Training |  | 1d | 2012-11-01 | 2012-11-01 | A1520 |  |  |  |  | 0d |  | as late as possible |  | Cl |
| A1540 | Pre-Final Inspection | milestone | 0d | 2012-11-02 | 2012-11-02 | A1530 |  |  |  |  | 0d |  | as late as possible |  | Cl |
| A1550 | Removing Deficiencies |  | 4d | 2012-11-02 | 2012-11-07 | A1540 |  |  |  |  | 0d |  | as late as possible |  | Cl |
| A1560 | Final Inspection | milestone | 0d | 2012-11-08 | 2012-11-08 | A1550 |  |  |  |  | 0d |  | as late as possible |  | Cl |
| A1570 | Handover As-builts |  | 1d | 2012-11-08 | 2012-11-08 | A1560 |  |  |  |  | 0d |  | as late as possible |  | Cl |
| A1580 | Handover O+M Manuals |  | 1d | 2012-11-08 | 2012-11-08 | A1570 SS |  |  |  |  | 0d |  | as late as possible |  | Cl |

## Activity codes

| Code | Value | Meaning |
| --- | --- | --- |
| Phase | Cl | Closeout Activities |
| Phase | P0 | Phase 0: General |
| Phase | P1 | Phase 1: Renovate Offices |
| Phase | P2 | Phase 2: Change Offices |
| Phase | P3 | Phase 3: Corridor |
